# 项目进度计划V1.0new

How a schedule from MS Project changed from version to version. A marks actual dates.

## Version 1 (saved 2020-03-21, file 项目进度计划V2.0.mpp)

Note of the change: 提交赵正阳第5周工作日志；提交需求分析汇报ppt；更新readme；删除目录空格

| ID | WBS | Task | Duration | Start | Finish | Predecessors | Complete |
| --- | --- | --- | --- | --- | --- | --- | --- |
| 1 |  | 项目开始 | 0d | 2020-03-06 A | 2020-03-06 A |  | 100% |
| 2 | 2 | **1 实验准备** | 14d | 2020-03-06 A | 2020-03-19 A |  | 100% |
| 3 | 2.1 | **第二周** | 7d | 2020-03-06 A | 2020-03-12 A |  | 100% |
| 4 |  | 1.1 第1次组会：熟悉组员、明确组长和选题 | 1d | 2020-03-06 A | 2020-03-06 A |  | 100% |
| 5 |  | 1.2 制作实验准备汇报PPT初稿 | 2d | 2020-03-07 A | 2020-03-08 A | 4 | 100% |
| 6 |  | 1.3 第2次组会：明确各个组员调研方向和对应的PPT部分 | 1d | 2020-03-09 A | 2020-03-09 A | 5 | 100% |
| 7 |  | 1.4 形成实验准备汇报PPT第二版 | 3d | 2020-03-10 A | 2020-03-12 A | 6 | 100% |
| 8 |  | 1.5 调研scrapy | 3d | 2020-03-10 A | 2020-03-12 A | 6 | 100% |
| 9 | 2.2 | **第三周** | 7d | 2020-03-13 A | 2020-03-19 A | 3 | 100% |
| 10 |  | 1.6 第3次组会：分配项目计划书任务 | 1d | 2020-03-13 A | 2020-03-13 A |  | 100% |
| 11 |  | 1.7 根据分配的任务学习scrapy，阅读源码和文档 | 2d | 2020-03-14 A | 2020-03-15 A | 10 | 100% |
| 12 |  | 1.8 熟悉git的使用，编写工作日志的模板和使用规范并提交至github | 2d | 2020-03-14 A | 2020-03-15 A | 10 | 100% |
| 13 |  | 1.9 学习MS Project、调研往届计算公式 | 2d | 2020-03-14 A | 2020-03-15 A | 10 | 100% |
| 14 |  | 1.10 完成计划书可视化部分 | 2d | 2020-03-14 A | 2020-03-15 A | 10 | 100% |
| 15 |  | 1.11 完成计划书反爬虫部分 | 2d | 2020-03-14 A | 2020-03-15 A | 10 | 100% |
| 16 |  | 1.12 完成计划书1-2节 | 2d | 2020-03-14 A | 2020-03-15 A | 10 | 100% |
| 17 |  | 1.13 完成计划书的甘特图、计算公式部分 | 2d | 2020-03-14 A | 2020-03-15 A | 10 | 100% |
| 18 |  | 1.14 完成计划书分布式部分 | 1.5d | 2020-03-14 A | 2020-03-15 A | 10 | 100% |
| 19 |  | 1.15 第4次组会：明确工作日志提交时间，确定项目大体需求 | 1d | 2020-03-16 A | 2020-03-16 A | 11, 12, 13, 14, 15, 16, 17, 18 | 100% |
| 20 |  | 1.16 调研实验6和实验7的输出，编写实验准备汇报ppt的评审意见文档 | 3d | 2020-03-17 A | 2020-03-19 A | 19 | 100% |
| 21 |  | 1.17 整合计划书 | 3d | 2020-03-17 A | 2020-03-19 A | 19 | 100% |
| 22 |  | 1.18 完成原型爬虫程序 | 3d | 2020-03-17 A | 2020-03-19 A | 19 | 100% |
| 23 |  | 1.19 阅读原型爬虫程序，思考反爬虫改进 | 3d | 2020-03-17 A | 2020-03-19 A | 19 | 100% |
| 24 |  | 1.20 部署Scraypd和Scrapydweb | 3d | 2020-03-17 A | 2020-03-19 A | 19 | 100% |
| 25 |  | 1.21 scrapy实践：编写一个基于scrapy的简单爬虫 | 3d | 2020-03-17 A | 2020-03-19 A | 19 | 100% |

## Version 2 (saved 2020-03-28, file 项目进度计划V3.0.mpp)

Note of the change: 提交MPP3.0

Last finish stays 2020-03-19. Complete tasks 22 → 37.

Added:

| ID | Task | Duration | Start | Finish | Predecessors | Resources |
| --- | --- | --- | --- | --- | --- | --- |
| 26 | **2 软件需求分析** | 7d | 2020-03-06 A | 2020-03-12 A |  |  |
| 27 | **第4周~第5周** | 7d | 2020-03-06 A | 2020-03-12 A |  |  |
| 28 | 2.1 第5次组会：绘制用例图、给组员分配负责的需求分析文档的部分 | 1d | 2020-03-06 A | 2020-03-06 A |  | 郭浩隆 [7.5%]; 梁远志 [7.5%]; 沈一聪 [7.5%]; 宋冰晨 [7.5%]; 赵正阳 [7.5%] |
| 29 | 2.2 完成需求规格说明书第1、2节和Scrapy框架的需求分析文档 | 2d | 2020-03-07 A | 2020-03-08 A | 28 | 赵正阳 [31.2%] |
| 30 | 2.3 形成Web UI部分需求分析文档 | 2d | 2020-03-07 A | 2020-03-08 A | 28 | 宋冰晨 [12.5%] |
| 31 | 2.4 重建github目录结构，计划书更新至1.3 | 2d | 2020-03-07 A | 2020-03-08 A | 28 | 宋冰晨 [6.2%] |
| 32 | 2.5 更新MS Project文档至2.0 | 2d | 2020-03-07 A | 2020-03-08 A | 28 | 宋冰晨 [12.5%] |
| 33 | 2.6 完成web ui部分20个RUCM | 2d | 2020-03-07 A | 2020-03-08 A | 28 | 郭浩隆 [18.8%] |
| 34 | 2.7 完成Scrapyd需求分析文档、RUCM图、数据库部分文档 | 2d | 2020-03-07 A | 2020-03-08 A | 28 | 梁远志 [43.8%] |
| 35 | 2.8 完成需求分析的后端部分以及反爬虫部分文档 | 2d | 2020-03-07 A | 2020-03-08 A | 28 | 沈一聪 [31.2%] |
| 36 | 2.9 第6次组会：组员各自制作需求分析汇报PPT相应的部分 | 1d | 2020-03-09 A | 2020-03-09 A | 29, 30, 31, 32, 33, 34, 35 | 郭浩隆 [1.2%]; 梁远志 [1.2%]; 沈一聪 [1.2%]; 宋冰晨 [1.2%]; 赵正阳 [1.2%] |
| 37 | 2.10 完成Scrapyd及实验七部分PPT | 3d | 2020-03-10 A | 2020-03-12 A | 36 | 梁远志 [8.3%] |
| 38 | 2.11 完成后端及反爬虫部分PPT | 3d | 2020-03-10 A | 2020-03-12 A | 36 | 沈一聪 [8.3%] |
| 39 | 2.12 形成需求规格说明书1.0 | 3d | 2020-03-10 A | 2020-03-12 A | 36 | 赵正阳 [8.3%] |
| 40 | 2.13 整合完成汇报ppt1.0版本 | 3d | 2020-03-10 A | 2020-03-12 A | 36 | 赵正阳 [4.2%] |
| 41 | 2.14 完成web ui原型1.0版本 | 3d | 2020-03-10 A | 2020-03-12 A | 36 | 宋冰晨 [25%] |
| 42 | 2.15 改进计划书至1.4 | 3d | 2020-03-10 A | 2020-03-12 A | 36 | 郭浩隆 [6.2%] |

Changed:

| ID | Task | Other |
| --- | --- | --- |
| 3 | **第2周~第3周** | was named 第二周 |
| 9 | **第3周~第4周** | was named 第三周 |

## Version 3 (saved 2020-04-03, file 项目进度计划v3.1.mpp)

Note of the change: 对制品文档重命名;提交MPP4.0

Last finish 2020-03-19 → 2020-03-26 (+7d).

Added:

| ID | Task | Duration | Start | Finish | Predecessors | Resources |
| --- | --- | --- | --- | --- | --- | --- |
| 42 | 2.15 整合完成汇报ppt1.0版本 | 1d | 2020-03-26 A | 2020-03-26 A | 37, 38, 39, 40, 41 | 赵正阳 [12.5%] |

Removed: 41 2.14 完成web ui原型1.0版本

Changed:

| ID | Task | Start | Finish | Duration | Predecessors | Other |
| --- | --- | --- | --- | --- | --- | --- |
| 2 | **1 实验准备** |  | 2020-03-19 A → 2020-03-26 A (+7d) | 14d → 21d |  | baseline finish 2020-03-19 → 2020-03-26 |
| 3 | **第2-3周** |  |  |  |  | was named 第2周~第3周 |
| 9 | **第3-4周** |  |  |  |  | was named 第3周~第4周 |
| 26 | **2 软件需求分析** | 2020-03-06 A → 2020-03-20 A (+14d) | 2020-03-12 A → 2020-03-26 A (+14d) |  |  | baseline start 2020-03-06 → 2020-03-20; baseline finish 2020-03-12 → 2020-03-26 |
| 27 | **第4-5周** | 2020-03-06 A → 2020-03-20 A (+14d) | 2020-03-12 A → 2020-03-26 A (+14d) |  | none → 9 | was named 第4周~第5周; baseline start 2020-03-06 → 2020-03-20; baseline finish 2020-03-12 → 2020-03-26 |
| 28 | 2.1 第5次组会：绘制用例图、给组员分配负责的需求分析文档的部分 | 2020-03-06 A → 2020-03-20 A (+14d) | 2020-03-06 A → 2020-03-20 A (+14d) |  |  | baseline start 2020-03-06 → 2020-03-20; baseline finish 2020-03-06 → 2020-03-20 |
| 29 | 2.2 完成需求规格说明书第1、2节和Scrapy框架的需求分析文档 | 2020-03-07 A → 2020-03-21 A (+14d) | 2020-03-08 A → 2020-03-22 A (+14d) |  |  | baseline start 2020-03-07 → 2020-03-21; baseline finish 2020-03-08 → 2020-03-22 |
| 30 | 2.3 形成Web UI部分需求分析文档 | 2020-03-07 A → 2020-03-21 A (+14d) | 2020-03-08 A → 2020-03-22 A (+14d) |  |  | baseline start 2020-03-07 → 2020-03-21; baseline finish 2020-03-08 → 2020-03-22 |
| 31 | 2.4 重建github目录结构，计划书更新至1.3 | 2020-03-07 A → 2020-03-21 A (+14d) | 2020-03-08 A → 2020-03-22 A (+14d) |  |  | baseline start 2020-03-07 → 2020-03-21; baseline finish 2020-03-08 → 2020-03-22 |
| 32 | 2.5 更新MS Project文档至2.0 | 2020-03-07 A → 2020-03-21 A (+14d) | 2020-03-08 A → 2020-03-22 A (+14d) |  |  | baseline start 2020-03-07 → 2020-03-21; baseline finish 2020-03-08 → 2020-03-22 |
| 33 | 2.6 完成web ui部分10个RUCM | 2020-03-10 A → 2020-03-21 A (+11d) | 2020-03-12 A → 2020-03-22 A (+10d) | 3d → 2d | 36 → 28 | was named 2.13 整合完成汇报ppt1.0版本; resources 赵正阳 [4.2%] → 郭浩隆 [18.8%]; baseline start 2020-03-10 → 2020-03-21; baseline finish 2020-03-12 → 2020-03-22 |
| 34 | 2.7 完成Scrapyd需求分析文档、RUCM图、数据库部分文档 | 2020-03-07 A → 2020-03-21 A (+14d) | 2020-03-08 A → 2020-03-22 A (+14d) |  |  | baseline start 2020-03-07 → 2020-03-21; baseline finish 2020-03-08 → 2020-03-22 |
| 35 | 2.8 完成需求分析的后端部分以及反爬虫部分文档 | 2020-03-07 A → 2020-03-21 A (+14d) | 2020-03-08 A → 2020-03-22 A (+14d) |  |  | baseline start 2020-03-07 → 2020-03-21; baseline finish 2020-03-08 → 2020-03-22 |
| 36 | 2.9 第6次组会：组员各自制作需求分析汇报PPT相应的部分 | 2020-03-09 A → 2020-03-23 A (+14d) | 2020-03-09 A → 2020-03-23 A (+14d) |  | 29, 30, 31, 32, 40, 34, 35 → 29, 30, 31, 32, 33, 34, 35 | baseline start 2020-03-09 → 2020-03-23; baseline finish 2020-03-09 → 2020-03-23 |
| 37 | 2.10 完成Scrapyd及实验七部分PPT | 2020-03-10 A → 2020-03-24 A (+14d) | 2020-03-12 A → 2020-03-25 A (+13d) | 3d → 2d |  | resources 梁远志 [8.3%] → 梁远志 [12.5%]; baseline start 2020-03-10 → 2020-03-24; baseline finish 2020-03-12 → 2020-03-25 |
| 38 | 2.11 完成后端及反爬虫部分PPT | 2020-03-10 A → 2020-03-24 A (+14d) | 2020-03-12 A → 2020-03-25 A (+13d) | 3d → 2d |  | resources 沈一聪 [8.3%] → 沈一聪 [12.5%]; baseline start 2020-03-10 → 2020-03-24; baseline finish 2020-03-12 → 2020-03-25 |
| 39 | 2.12 形成需求规格说明书1.0 | 2020-03-10 A → 2020-03-24 A (+14d) | 2020-03-12 A → 2020-03-25 A (+13d) | 3d → 2d |  | resources 赵正阳 [8.3%] → 赵正阳 [12.5%]; baseline start 2020-03-10 → 2020-03-24; baseline finish 2020-03-12 → 2020-03-25 |
| 40 | 2.13 完成web ui原型1.0版本 | 2020-03-07 A → 2020-03-24 A (+17d) | 2020-03-08 A → 2020-03-25 A (+17d) |  | 28 → 36 | was named 2.6 完成web ui部分20个RUCM; resources 郭浩隆 [18.8%] → 宋冰晨 [37.5%]; baseline start 2020-03-07 → 2020-03-24; baseline finish 2020-03-08 → 2020-03-25 |
| 41 | 2.14 改进计划书至1.4 | 2020-03-10 A → 2020-03-24 A (+14d) | 2020-03-12 A → 2020-03-25 A (+13d) | 3d → 2d |  | was named 2.15 改进计划书至1.4; resources 郭浩隆 [6.2%] → 郭浩隆 [9.4%]; baseline start 2020-03-10 → 2020-03-24; baseline finish 2020-03-12 → 2020-03-25 |

## Version 4 (saved 2020-04-03, file 项目进度计划v4.0.mpp)

Note of the change: 对制品文档重命名;提交MPP4.0

Last finish 2020-03-26 → 2020-04-02 (+7d). Complete tasks 37 → 53.

Added:

| ID | Task | Duration | Start | Finish | Predecessors | Resources |
| --- | --- | --- | --- | --- | --- | --- |
| 43 | **第5-6周** | 7d | 2020-03-27 A | 2020-04-02 A | 27 |  |
| 44 | 2.16 第7次组会：确定需求规格说明书改分工、分配需求评审表格设计和实验8任务 | 1d | 2020-03-27 A | 2020-03-27 A |  | 郭浩隆 [2.5%]; 梁远志 [2.5%]; 沈一聪 [2.5%]; 宋冰晨 [2.5%]; 赵正阳 [2.5%] |
| 45 | 2.17 更新MS Project文档至3.0 | 2d | 2020-03-28 A | 2020-03-29 A | 44 | 宋冰晨 [6.2%] |
| 46 | 2.18 扩充需求分析文档的项目背景、用户特点、假定及约束 | 2d | 2020-03-28 A | 2020-03-29 A | 44 | 宋冰晨 [12.5%] |
| 47 | 2.19 调研Django | 2d | 2020-03-28 A | 2020-03-29 A | 44 | 赵正阳 [25%] |
| 48 | 2.20 形成工作量统计分析报告v1.0 | 2d | 2020-03-28 A | 2020-03-29 A | 44 | 赵正阳 [9.4%] |
| 49 | 2.21 补充了Scrapy框架需求分析的文字描述 | 2d | 2020-03-28 A | 2020-03-29 A | 44 | 赵正阳 [6.2%] |
| 50 | 2.22 扩充需求分析文档的后端需求RUCM文字说明、业务需求 | 2d | 2020-03-28 A | 2020-03-29 A | 44 | 沈一聪 [12.5%] |
| 51 | 2.23 完成需求分析评审表的设计 | 2d | 2020-03-28 A | 2020-03-29 A | 44 | 沈一聪 [12.5%] |
| 52 | 2.24 添加了Scrapyd的介绍、添加了各个RUCM的文字说明 | 2d | 2020-03-28 A | 2020-03-29 A | 44 | 梁远志 [12.5%] |
| 53 | 2.25 扩充web ui部分RUCM的文字描述 | 2d | 2020-03-28 A | 2020-03-29 A | 44 | 郭浩隆 [15.6%] |
| 54 | 2.26 第8次组会：确定编码、PPT分工 | 1d | 2020-03-30 A | 2020-03-30 A | 45, 46, 47, 48, 49, 50, 51, 52, 53 | 郭浩隆 [2.5%]; 梁远志 [2.5%]; 沈一聪 [2.5%]; 宋冰晨 [2.5%]; 赵正阳 [2.5%] |
| 55 | 2.27 完成需求规格说明书v1.1 | 2d | 2020-03-31 A | 2020-04-01 A | 54 | 赵正阳 [6.2%] |
| 56 | 2.28 完成需求分析评审表部分的PPT制作、练习PPT展示 | 2d | 2020-03-31 A | 2020-04-01 A | 54 | 沈一聪 [12.5%] |
| 57 | 2.29 完成实验6初始数据的展示部分PPT制作 | 2d | 2020-03-31 A | 2020-04-01 A | 54 | 宋冰晨 [12.5%] |
| 58 | 2.30 制作了实验7的展示幻灯片 | 2d | 2020-03-31 A | 2020-04-01 A | 54 | 梁远志 [6.2%] |
| 59 | 2.31 完成实验8的PPT部分及整合工作，形成第六周展示PPT | 1d | 2020-04-02 A | 2020-04-02 A | 55, 56, 57, 58 | 赵正阳 [12.5%] |

Changed:

| ID | Task | Finish | Duration | Other |
| --- | --- | --- | --- | --- |
| 2 | **1 实验准备** | 2020-03-26 A → 2020-04-02 A (+7d) | 21d → 28d | baseline finish 2020-03-26 → 2020-04-02 |
| 26 | **2 软件需求分析** | 2020-03-26 A → 2020-04-02 A (+7d) | 7d → 14d | baseline finish 2020-03-26 → 2020-04-02 |

## Version 5 (saved 2020-04-10, file 项目进度计划v5.0.mpp)

Note of the change: 提交MPP文件5.0

Last finish 2020-04-02 → 2020-04-09 (+7d). Complete tasks 53 → 66.

Added:

| ID | Task | Duration | Start | Finish | Predecessors | Constraint | Resources |
| --- | --- | --- | --- | --- | --- | --- | --- |
| 60 | **3 软件需求评审** | 7d | 2020-04-03 A | 2020-04-09 A |  |  |  |
| 61 | **第6-7周** | 7d | 2020-04-03 A | 2020-04-09 A | 43 |  |  |
| 62 | 更新MS Project至4.0 | 4d | 2020-04-03 A | 2020-04-06 A |  |  | 宋冰晨 [4.7%] |
| 63 | 检查F组需求文档，形成12条评审意见 | 1d | 2020-04-06 A | 2020-04-06 A |  | start no earlier than 2020-04-06 | 梁远志 [12.5%] |
| 64 | 检查F组需求文档，形成14条评审意见 | 1d | 2020-04-06 A | 2020-04-06 A |  | start no earlier than 2020-04-06 | 沈一聪 [25%] |
| 65 | 检查G组需求文档，形成10条评审意见 | 1d | 2020-04-06 A | 2020-04-06 A |  | start no earlier than 2020-04-06 | 宋冰晨 [18.8%] |
| 66 | 检查G组需求文档，形成8条评审意见 | 1d | 2020-04-06 A | 2020-04-06 A |  | start no earlier than 2020-04-06 | 赵正阳 [12.5%] |
| 67 | 检查G组需求文档，形成6条评审意见 | 1d | 2020-04-06 A | 2020-04-06 A |  | start no earlier than 2020-04-06 | 郭浩隆 [12.5%] |
| 68 | 第9次组会：整合对F和G组的评审意见 | 1d | 2020-04-07 A | 2020-04-07 A | 63, 64, 65, 66, 67, 62 | start no earlier than 2020-04-07 | 郭浩隆 [5%]; 梁远志 [5%]; 沈一聪 [5%]; 宋冰晨 [5%]; 赵正阳 [5%] |
| 69 | 根据评审意见A-2、4、9、10、19和I-5、7、8、9、10、11、20、21、23形成需求文档v1.2.1，以及完成对应PPT的制作 | 1d | 2020-04-08 A | 2020-04-08 A | 68 |  | 赵正阳 [12.5%] |
| 70 | 根据评审意见A-1、3、5和I-3形成需求文档v1.2.2，以及完成对应PPT的制作 | 1d | 2020-04-08 A | 2020-04-08 A | 68 |  | 宋冰晨 [25%] |
| 71 | 根据评审意见A-6和I-12、13、14形成需求文档v1.2.3，以及完成对应PPT的制作 | 1d | 2020-04-08 A | 2020-04-08 A | 68 |  | 郭浩隆 [25%] |
| 72 | 根据评审意见A-15、17、18和I-1、2、18、22、24形成需求文档v1.2.4，以及完成对应PPT的制作 | 1d | 2020-04-08 A | 2020-04-08 A | 68 |  | 梁远志 [18.8%] |
| 73 | 根据评审意见A-7、8、11、12、13、14、16和I-2、4、6、7、15、16、17、18、19形成需求文档v1.2.5，以及完成对应PPT的制作 | 1d | 2020-04-08 A | 2020-04-08 A | 68 |  | 沈一聪 [37.5%] |
| 74 | 整合形成第7周课堂汇报PPT | 1d | 2020-04-09 A | 2020-04-09 A | 69, 70, 71, 72, 73 |  | 赵正阳 [6.2%] |

Changed:

| ID | Task | Finish | Duration | Other |
| --- | --- | --- | --- | --- |
| 2 | **1 实验准备** | 2020-04-02 A → 2020-04-09 A (+7d) | 28d → 35d | baseline finish 2020-04-02 → 2020-04-09 |
| 26 | **2 软件需求分析** | 2020-04-02 A → 2020-04-09 A (+7d) | 14d → 21d | baseline finish 2020-04-02 → 2020-04-09 |

## Version 6 (saved 2020-04-17, file 项目进度计划v5.1.mpp)

Note of the change: 提交MPP6.0

Last finish stays 2020-04-09.

Added:

| ID | Task | Duration | Start | Finish | Predecessors |
| --- | --- | --- | --- | --- | --- |
| 61 | **第6周** | 7d | 2020-04-03 A | 2020-04-09 A | 43 |

Removed: 61 第6-7周

Changed:

| ID | Task | Start | Finish | Duration | Predecessors | Other |
| --- | --- | --- | --- | --- | --- | --- |
| 3 | **第2周** |  |  |  |  | was named 第2-3周 |
| 9 | **第3周** |  |  |  |  | was named 第3-4周 |
| 26 | **2 软件需求分析** |  | 2020-04-09 A → 2020-04-02 A (-7d) | 21d → 14d |  | baseline finish 2020-04-09 → 2020-04-02 |
| 27 | **第4周** |  |  |  |  | was named 第4-5周 |
| 43 | **第5周** |  |  |  |  | was named 第5-6周 |
| 64 | 检查F组需求文档，形成14条评审意见 |  |  |  |  | resources 沈一聪 [25%] → 沈一聪 [37.5%] |
| 68 | 第9次组会：整合对F和G组的评审意见 |  |  |  |  | constraint start no earlier than 2020-04-07 → none |
| 69 | 根据评审意见A-2、4、9、10、19和I-5、7、8、9、10、11、20、21、23形成需求文档v1.2.1，以及完成对应PPT的制作 |  |  | 1d → 0.3d |  | resources 赵正阳 [12.5%] → 赵正阳 [41.7%] |
| 70 | 根据评审意见A-1、3、5和I-3形成需求文档v1.2.2，以及完成对应PPT的制作 |  |  | 1d → 0.3d | 68 → 69 | resources 宋冰晨 [25%] → 宋冰晨 [83.3%] |
| 71 | 根据评审意见A-6和I-12、13、14形成需求文档v1.2.3，以及完成对应PPT的制作 |  |  | 1d → 0.3d | 68 → 70 | resources 郭浩隆 [25%] → 郭浩隆 [83.3%] |
| 72 | 根据评审意见A-15、17、18和I-1、2、18、22、24形成需求文档v1.2.4，以及完成对应PPT的制作 |  | 2020-04-08 A → 2020-04-09 A (+1d) | 1d → 0.3d | 68 → 71 | resources 梁远志 [18.8%] → 梁远志 [62.5%]; baseline finish 2020-04-08 → 2020-04-09 |
| 73 | 根据评审意见A-7、8、11、12、13、14、16和I-2、4、6、7、15、16、17、18、19形成需求文档v1.2.5，以及完成对应PPT的制作 | 2020-04-08 A → 2020-04-09 A (+1d) | 2020-04-08 A → 2020-04-09 A (+1d) | 1d → 0.3d | 68 → 72 | resources 沈一聪 [37.5%] → 沈一聪 [83.3%]; baseline start 2020-04-08 → 2020-04-09; baseline finish 2020-04-08 → 2020-04-09 |
| 74 | 整合形成第7周课堂汇报PPT |  |  | 1d → 0.5d | 69, 70, 71, 72, 73 → 73 | resources 赵正阳 [6.2%] → 赵正阳 [12.5%] |

## Version 7 (saved 2020-04-17, file 项目进度计划v6.0.mpp)

Note of the change: 提交MPP6.0

Last finish 2020-04-09 → 2020-04-17 (+8d). Complete tasks 66 → 79.

Added:

| ID | Task | Duration | Start | Finish | Predecessors | Constraint | Resources |
| --- | --- | --- | --- | --- | --- | --- | --- |
| 75 | **第7周** | 7d | 2020-04-10 A | 2020-04-16 A | 61 |  |  |
| 76 | 更新MS Project至5.0 | 4d | 2020-04-10 A | 2020-04-13 A |  |  | 宋冰晨 [3.1%] |
| 77 | 检查I组需求文档，形成7条评审意见 | 1d | 2020-04-13 A | 2020-04-13 A |  | start no earlier than 2020-04-13 | 郭浩隆 [31.2%] |
| 78 | 检查I组需求文档，形成22条评审意见 | 1d | 2020-04-13 A | 2020-04-13 A |  | start no earlier than 2020-04-13 | 梁远志 [25%] |
| 79 | 检查I组需求文档，形成18条评审意见 | 1d | 2020-04-13 A | 2020-04-13 A |  | start no earlier than 2020-04-13 | 宋冰晨 [25%] |
| 80 | 检查A组需求文档，形成6条评审意见 | 1d | 2020-04-13 A | 2020-04-13 A |  | start no earlier than 2020-04-13 | 赵正阳 [12.5%] |
| 81 | 检查A组需求文档，形成17条评审意见 | 1d | 2020-04-13 A | 2020-04-13 A |  | start no earlier than 2020-04-13 | 沈一聪 [25%] |
| 82 | 第10次组会：整合对A和I组的评审意见 | 1d | 2020-04-14 A | 2020-04-14 A | 77, 78, 79, 80, 81 |  | 郭浩隆 [2.5%]; 梁远志 [2.5%]; 沈一聪 [2.5%]; 宋冰晨 [2.5%]; 赵正阳 [2.5%] |
| 83 | 根据评审意见F-1、2、9、10、11、15、16、17、18和G-1、2、6、10、11、14、15、16、21、22形成需求文档v1.3.0，以及完成对应PPT的制作 | 0.4d | 2020-04-15 A | 2020-04-15 A | 82 |  | 赵正阳 [62.5%] |
| 84 | 根据评审意见F-4、5和G-3、7、8、9、18形成需求文档v1.3.1，以及完成对应PPT的制作 | 0.4d | 2020-04-15 A | 2020-04-15 A | 83 |  | 沈一聪 [62.5%] |
| 85 | 根据评审意见F-3和G-4、5、17、19、20形成需求文档v1.3.2，以及完成对应PPT的制作 | 0.4d | 2020-04-15 A | 2020-04-16 A | 84 |  | 梁远志 [62.5%] |
| 86 | 根据评审意见F-6、7、8、12、13、14、19、20、21和G-12、13形成需求文档v1.3.3，以及完成对应PPT的制作 | 0.4d | 2020-04-16 A | 2020-04-16 A | 85 |  | 宋冰晨 [78.1%] |
| 87 | 整合形成第8周课堂汇报PPT | 0.4d | 2020-04-16 A | 2020-04-16 A | 83, 84, 85, 86 |  | 赵正阳 [15.6%] |
| 88 | **期中** | 1d | 2020-04-17 A | 2020-04-17 A |  |  |  |
| 89 | **第8周** | 1d | 2020-04-17 A | 2020-04-17 A | 75 |  |  |
| 90 | 更新MS Project至6.0 | 1d | 2020-04-17 A | 2020-04-17 A |  |  | 宋冰晨 [25%] |

Changed:

| ID | Task | Finish | Duration | Predecessors | Other |
| --- | --- | --- | --- | --- | --- |
| 2 | **1 实验准备** | 2020-04-09 A → 2020-04-17 A (+8d) | 35d → 43d |  | baseline finish 2020-04-09 → 2020-04-16 |
| 17 | 1.13 完成计划书的甘特图（MS Project1.0）、计算公式部分 |  |  |  | was named 1.13 完成计划书的甘特图、计算公式部分 |
| 60 | **3 软件需求评审** | 2020-04-09 A → 2020-04-16 A (+7d) | 7d → 14d |  | baseline finish 2020-04-09 → 2020-04-16 |
| 68 | 第9次组会：整合对F和G组的评审意见 |  |  | 62, 63, 64, 65, 66, 67 → 63, 64, 65, 66, 67 |  |
| 74 | 整合形成第7周课堂汇报PPT |  |  | 73 → 73, 69, 70, 71, 72 |  |

## Version 8 (saved 2020-04-27, file 项目进度计划v4.0.mpp)

Note of the change: 提交MPP7.0

Last finish 2020-04-17 → 2020-04-02 (-15d). Complete tasks 79 → 53.

Removed: 60 3 软件需求评审; 61 第6周; 62 更新MS Project至4.0; 63 检查F组需求文档，形成12条评审意见; 64 检查F组需求文档，形成14条评审意见; 65 检查G组需求文档，形成10条评审意见; 66 检查G组需求文档，形成8条评审意见; 67 检查G组需求文档，形成6条评审意见; 68 第9次组会：整合对F和G组的评审意见; 69 根据评审意见A-2、4、9、10、19和I-5、7、8、9、10、11、20、21、23形成需求文档v1.2.1，以及完成对应PPT的制作; 70 根据评审意见A-1、3、5和I-3形成需求文档v1.2.2，以及完成对应PPT的制作; 71 根据评审意见A-6和I-12、13、14形成需求文档v1.2.3，以及完成对应PPT的制作; 72 根据评审意见A-15、17、18和I-1、2、18、22、24形成需求文档v1.2.4，以及完成对应PPT的制作; 73 根据评审意见A-7、8、11、12、13、14、16和I-2、4、6、7、15、16、17、18、19形成需求文档v1.2.5，以及完成对应PPT的制作; 74 整合形成第7周课堂汇报PPT; 75 第7周; 76 更新MS Project至5.0; 77 检查I组需求文档，形成7条评审意见; 78 检查I组需求文档，形成22条评审意见; 79 检查I组需求文档，形成18条评审意见; 80 检查A组需求文档，形成6条评审意见; 81 检查A组需求文档，形成17条评审意见; 82 第10次组会：整合对A和I组的评审意见; 83 根据评审意见F-1、2、9、10、11、15、16、17、18和G-1、2、6、10、11、14、15、16、21、22形成需求文档v1.3.0，以及完成对应PPT的制作; 84 根据评审意见F-4、5和G-3、7、8、9、18形成需求文档v1.3.1，以及完成对应PPT的制作; 85 根据评审意见F-3和G-4、5、17、19、20形成需求文档v1.3.2，以及完成对应PPT的制作; 86 根据评审意见F-6、7、8、12、13、14、19、20、21和G-12、13形成需求文档v1.3.3，以及完成对应PPT的制作; 87 整合形成第8周课堂汇报PPT; 88 期中; 89 第8周; 90 更新MS Project至6.0

Changed:

| ID | Task | Finish | Duration | Other |
| --- | --- | --- | --- | --- |
| 2 | **1 实验准备** | 2020-04-17 A → 2020-03-19 A (-29d) | 43d → 14d | baseline finish 2020-04-16 → 2020-04-02 |
| 3 | **第2-3周** |  |  | was named 第2周 |
| 9 | **第3-4周** |  |  | was named 第3周 |
| 17 | 1.13 完成计划书的甘特图、计算公式部分 |  |  | was named 1.13 完成计划书的甘特图（MS Project1.0）、计算公式部分 |
| 27 | **第4-5周** |  |  | was named 第4周 |
| 43 | **第5-6周** |  |  | was named 第5周 |

## Version 9 (saved 2020-04-27, file 项目进度计划v3.1.mpp)

Note of the change: 提交MPP7.0

Last finish 2020-04-02 → 2020-03-26 (-7d). Complete tasks 53 → 37.

Removed: 43 第5-6周; 44 2.16 第7次组会：确定需求规格说明书改分工、分配需求评审表格设计和实验8任务; 45 2.17 更新MS Project文档至3.0; 46 2.18 扩充需求分析文档的项目背景、用户特点、假定及约束; 47 2.19 调研Django; 48 2.20 形成工作量统计分析报告v1.0; 49 2.21 补充了Scrapy框架需求分析的文字描述; 50 2.22 扩充需求分析文档的后端需求RUCM文字说明、业务需求; 51 2.23 完成需求分析评审表的设计; 52 2.24 添加了Scrapyd的介绍、添加了各个RUCM的文字说明; 53 2.25 扩充web ui部分RUCM的文字描述; 54 2.26 第8次组会：确定编码、PPT分工; 55 2.27 完成需求规格说明书v1.1; 56 2.28 完成需求分析评审表部分的PPT制作、练习PPT展示; 57 2.29 完成实验6初始数据的展示部分PPT制作; 58 2.30 制作了实验7的展示幻灯片; 59 2.31 完成实验8的PPT部分及整合工作，形成第六周展示PPT

Changed:

| ID | Task | Finish | Duration | Other |
| --- | --- | --- | --- | --- |
| 2 | **1 实验准备** |  |  | baseline finish 2020-04-02 → 2020-03-26 |
| 3 | **第2周** |  |  | was named 第2-3周 |
| 9 | **第3周** |  |  | was named 第3-4周 |
| 26 | **2 软件需求分析** | 2020-04-02 A → 2020-03-26 A (-7d) | 14d → 7d | baseline finish 2020-04-02 → 2020-03-26 |
| 27 | **第4周** |  |  | was named 第4-5周 |

## Version 10 (saved 2020-04-27, file 项目进度计划V2.0.mpp)

Note of the change: 提交MPP7.0

Last finish 2020-03-26 → 2020-03-19 (-7d). Complete tasks 37 → 22.

Removed: 26 2 软件需求分析; 27 第4周; 28 2.1 第5次组会：绘制用例图、给组员分配负责的需求分析文档的部分; 29 2.2 完成需求规格说明书第1、2节和Scrapy框架的需求分析文档; 30 2.3 形成Web UI部分需求分析文档; 31 2.4 重建github目录结构，计划书更新至1.3; 32 2.5 更新MS Project文档至2.0; 33 2.6 完成web ui部分10个RUCM; 34 2.7 完成Scrapyd需求分析文档、RUCM图、数据库部分文档; 35 2.8 完成需求分析的后端部分以及反爬虫部分文档; 36 2.9 第6次组会：组员各自制作需求分析汇报PPT相应的部分; 37 2.10 完成Scrapyd及实验七部分PPT; 38 2.11 完成后端及反爬虫部分PPT; 39 2.12 形成需求规格说明书1.0; 40 2.13 完成web ui原型1.0版本; 41 2.14 改进计划书至1.4; 42 2.15 整合完成汇报ppt1.0版本

Changed:

| ID | Task | Other |
| --- | --- | --- |
| 2 | **1 实验准备** | baseline finish 2020-03-26 → 2020-03-19 |

## Version 11 (saved 2020-04-27, file 项目进度计划v3.2.mpp)

Note of the change: 提交MPP7.0

Last finish 2020-03-19 → 2020-03-26 (+7d). Complete tasks 22 → 37.

Added:

| ID | Task | Duration | Start | Finish | Predecessors | Resources |
| --- | --- | --- | --- | --- | --- | --- |
| 26 | **2 软件需求分析** | 7d | 2020-03-20 A | 2020-03-26 A |  |  |
| 27 | **第4周** | 7d | 2020-03-20 A | 2020-03-26 A | 9 |  |
| 28 | 2.1 第5次组会：绘制用例图、分配需求文档 | 1d | 2020-03-20 A | 2020-03-20 A |  | 郭浩隆 [7.5%]; 梁远志 [7.5%]; 沈一聪 [7.5%]; 宋冰晨 [7.5%]; 赵正阳 [7.5%] |
| 29 | 2.2 完成需求规格说明书1、2节和scrapy需求分析部分 | 2d | 2020-03-21 A | 2020-03-22 A | 28 | 赵正阳 [31.2%] |
| 30 | 2.3 形成web ui部分需求文档 | 2d | 2020-03-21 A | 2020-03-22 A | 28 | 宋冰晨 [12.5%] |
| 31 | 2.4 重建github目录结构，计划书更新至1.3 | 2d | 2020-03-21 A | 2020-03-22 A | 28 | 宋冰晨 [6.2%] |
| 32 | 2.5 更新MS Project文档至2.0 | 3d | 2020-03-20 A | 2020-03-22 A |  | 宋冰晨 [8.3%] |
| 33 | 2.6 完成web ui部分20个RUCM | 2d | 2020-03-21 A | 2020-03-22 A | 28 | 郭浩隆 [18.8%] |
| 34 | 2.7 完成scrapyd需求文档及数据库部分 | 2d | 2020-03-21 A | 2020-03-22 A | 28 | 梁远志 [43.8%] |
| 35 | 2.8 完成后端及反爬虫部分需求文档 | 2d | 2020-03-21 A | 2020-03-22 A | 28 | 沈一聪 [31.2%] |
| 36 | 2.9 第6次组会：组员各自制作PPT | 1d | 2020-03-23 A | 2020-03-23 A | 29, 30, 33, 34, 35 | 郭浩隆 [1.2%]; 梁远志 [1.2%]; 沈一聪 [1.2%]; 宋冰晨 [1.2%]; 赵正阳 [1.2%] |
| 37 | 2.10 完成scrapyd及实验七PPT制作 | 2d | 2020-03-24 A | 2020-03-25 A | 36 | 梁远志 [12.5%] |
| 38 | 2.11 完成后端及反爬虫部分PPT制作 | 2d | 2020-03-24 A | 2020-03-25 A | 36 | 沈一聪 [12.5%] |
| 39 | 2.12 形成需求文档1.0 | 2d | 2020-03-24 A | 2020-03-25 A | 36 | 赵正阳 [12.5%] |
| 40 | 2.13 完成web ui原型1.0 | 2d | 2020-03-24 A | 2020-03-25 A | 36 | 宋冰晨 [37.5%] |
| 41 | 2.14 更新计划书至1.4 | 2d | 2020-03-24 A | 2020-03-25 A | 36 | 郭浩隆 [9.4%] |
| 42 | 2.15 形成需求文档汇报ppt | 1d | 2020-03-26 A | 2020-03-26 A | 37, 38, 39, 40, 41 | 赵正阳 [12.5%] |

## Version 12 (saved 2020-04-27, file 项目进度计划v5.1.mpp)

Note of the change: 提交MPP7.0

Last finish 2020-03-26 → 2020-04-09 (+14d). Complete tasks 37 → 66.

Added:

| ID | Task | Duration | Start | Finish | Predecessors | Constraint | Resources |
| --- | --- | --- | --- | --- | --- | --- | --- |
| 40 | 2.13 完成web ui原型1.0版本 | 2d | 2020-03-24 A | 2020-03-25 A | 36 |  | 宋冰晨 [37.5%] |
| 41 | 2.14 改进计划书至1.4 | 2d | 2020-03-24 A | 2020-03-25 A | 36 |  | 郭浩隆 [9.4%] |
| 43 | **第5周** | 7d | 2020-03-27 A | 2020-04-02 A | 27 |  |  |
| 44 | 2.16 第7次组会：确定需求规格说明书改分工、分配需求评审表格设计和实验8任务 | 1d | 2020-03-27 A | 2020-03-27 A |  |  | 郭浩隆 [2.5%]; 梁远志 [2.5%]; 沈一聪 [2.5%]; 宋冰晨 [2.5%]; 赵正阳 [2.5%] |
| 45 | 2.17 更新MS Project文档至3.0 | 2d | 2020-03-28 A | 2020-03-29 A | 44 |  | 宋冰晨 [6.2%] |
| 46 | 2.18 扩充需求分析文档的项目背景、用户特点、假定及约束 | 2d | 2020-03-28 A | 2020-03-29 A | 44 |  | 宋冰晨 [12.5%] |
| 47 | 2.19 调研Django | 2d | 2020-03-28 A | 2020-03-29 A | 44 |  | 赵正阳 [25%] |
| 48 | 2.20 形成工作量统计分析报告v1.0 | 2d | 2020-03-28 A | 2020-03-29 A | 44 |  | 赵正阳 [9.4%] |
| 49 | 2.21 补充了Scrapy框架需求分析的文字描述 | 2d | 2020-03-28 A | 2020-03-29 A | 44 |  | 赵正阳 [6.2%] |
| 50 | 2.22 扩充需求分析文档的后端需求RUCM文字说明、业务需求 | 2d | 2020-03-28 A | 2020-03-29 A | 44 |  | 沈一聪 [12.5%] |
| 51 | 2.23 完成需求分析评审表的设计 | 2d | 2020-03-28 A | 2020-03-29 A | 44 |  | 沈一聪 [12.5%] |
| 52 | 2.24 添加了Scrapyd的介绍、添加了各个RUCM的文字说明 | 2d | 2020-03-28 A | 2020-03-29 A | 44 |  | 梁远志 [12.5%] |
| 53 | 2.25 扩充web ui部分RUCM的文字描述 | 2d | 2020-03-28 A | 2020-03-29 A | 44 |  | 郭浩隆 [15.6%] |
| 54 | 2.26 第8次组会：确定编码、PPT分工 | 1d | 2020-03-30 A | 2020-03-30 A | 45, 46, 47, 48, 49, 50, 51, 52, 53 |  | 郭浩隆 [2.5%]; 梁远志 [2.5%]; 沈一聪 [2.5%]; 宋冰晨 [2.5%]; 赵正阳 [2.5%] |
| 55 | 2.27 完成需求规格说明书v1.1 | 2d | 2020-03-31 A | 2020-04-01 A | 54 |  | 赵正阳 [6.2%] |
| 56 | 2.28 完成需求分析评审表部分的PPT制作、练习PPT展示 | 2d | 2020-03-31 A | 2020-04-01 A | 54 |  | 沈一聪 [12.5%] |
| 57 | 2.29 完成实验6初始数据的展示部分PPT制作 | 2d | 2020-03-31 A | 2020-04-01 A | 54 |  | 宋冰晨 [12.5%] |
| 58 | 2.30 制作了实验7的展示幻灯片 | 2d | 2020-03-31 A | 2020-04-01 A | 54 |  | 梁远志 [6.2%] |
| 59 | 2.31 完成实验8的PPT部分及整合工作，形成第六周展示PPT | 1d | 2020-04-02 A | 2020-04-02 A | 55, 56, 57, 58 |  | 赵正阳 [12.5%] |
| 60 | **3 软件需求评审** | 7d | 2020-04-03 A | 2020-04-09 A |  |  |  |
| 61 | **第6周** | 7d | 2020-04-03 A | 2020-04-09 A | 43 |  |  |
| 62 | 更新MS Project至4.0 | 4d | 2020-04-03 A | 2020-04-06 A |  |  | 宋冰晨 [4.7%] |
| 63 | 检查F组需求文档，形成12条评审意见 | 1d | 2020-04-06 A | 2020-04-06 A |  | start no earlier than 2020-04-06 | 梁远志 [12.5%] |
| 64 | 检查F组需求文档，形成14条评审意见 | 1d | 2020-04-06 A | 2020-04-06 A |  | start no earlier than 2020-04-06 | 沈一聪 [37.5%] |
| 65 | 检查G组需求文档，形成10条评审意见 | 1d | 2020-04-06 A | 2020-04-06 A |  | start no earlier than 2020-04-06 | 宋冰晨 [18.8%] |
| 66 | 检查G组需求文档，形成8条评审意见 | 1d | 2020-04-06 A | 2020-04-06 A |  | start no earlier than 2020-04-06 | 赵正阳 [12.5%] |
| 67 | 检查G组需求文档，形成6条评审意见 | 1d | 2020-04-06 A | 2020-04-06 A |  | start no earlier than 2020-04-06 | 郭浩隆 [12.5%] |
| 68 | 第9次组会：整合对F和G组的评审意见 | 1d | 2020-04-07 A | 2020-04-07 A | 62, 63, 64, 65, 66, 67 |  | 郭浩隆 [5%]; 梁远志 [5%]; 沈一聪 [5%]; 宋冰晨 [5%]; 赵正阳 [5%] |
| 69 | 根据评审意见A-2、4、9、10、19和I-5、7、8、9、10、11、20、21、23形成需求文档v1.2.1，以及完成对应PPT的制作 | 0.3d | 2020-04-08 A | 2020-04-08 A | 68 |  | 赵正阳 [41.7%] |
| 70 | 根据评审意见A-1、3、5和I-3形成需求文档v1.2.2，以及完成对应PPT的制作 | 0.3d | 2020-04-08 A | 2020-04-08 A | 69 |  | 宋冰晨 [83.3%] |
| 71 | 根据评审意见A-6和I-12、13、14形成需求文档v1.2.3，以及完成对应PPT的制作 | 0.3d | 2020-04-08 A | 2020-04-08 A | 70 |  | 郭浩隆 [83.3%] |
| 72 | 根据评审意见A-15、17、18和I-1、2、18、22、24形成需求文档v1.2.4，以及完成对应PPT的制作 | 0.3d | 2020-04-08 A | 2020-04-09 A | 71 |  | 梁远志 [62.5%] |
| 73 | 根据评审意见A-7、8、11、12、13、14、16和I-2、4、6、7、15、16、17、18、19形成需求文档v1.2.5，以及完成对应PPT的制作 | 0.3d | 2020-04-09 A | 2020-04-09 A | 72 |  | 沈一聪 [83.3%] |
| 74 | 整合形成第7周课堂汇报PPT | 0.5d | 2020-04-09 A | 2020-04-09 A | 73 |  | 赵正阳 [12.5%] |

Removed: 35 2.8 完成后端及反爬虫部分需求文档; 36 2.9 第6次组会：组员各自制作PPT

Changed:

| ID | Task | Start | Finish | Duration | Predecessors | Other |
| --- | --- | --- | --- | --- | --- | --- |
| 2 | **1 实验准备** |  |  |  |  | baseline finish 2020-03-19 → 2020-04-09 |
| 26 | **2 软件需求分析** |  | 2020-03-26 A → 2020-04-02 A (+7d) | 7d → 14d |  | baseline finish 2020-03-26 → 2020-04-02 |
| 28 | 2.1 第5次组会：绘制用例图、给组员分配负责的需求分析文档的部分 |  |  |  |  | was named 2.1 第5次组会：绘制用例图、分配需求文档 |
| 29 | 2.2 完成需求规格说明书第1、2节和Scrapy框架的需求分析文档 |  |  |  |  | was named 2.2 完成需求规格说明书1、2节和scrapy需求分析部分 |
| 30 | 2.3 形成Web UI部分需求分析文档 |  |  |  |  | was named 2.3 形成web ui部分需求文档 |
| 32 | 2.5 更新MS Project文档至2.0 | 2020-03-20 A → 2020-03-21 A (+1d) |  | 3d → 2d | none → 28 | resources 宋冰晨 [8.3%] → 宋冰晨 [12.5%]; baseline start 2020-03-20 → 2020-03-21 |
| 33 | 2.6 完成web ui部分10个RUCM |  |  |  |  | was named 2.6 完成web ui部分20个RUCM |
| 34 | 2.7 完成Scrapyd需求分析文档、RUCM图、数据库部分文档 |  |  |  |  | was named 2.7 完成scrapyd需求文档及数据库部分 |
| 35 | 2.8 完成需求分析的后端部分以及反爬虫部分文档 | 2020-03-24 A → 2020-03-21 A (-3d) | 2020-03-25 A → 2020-03-22 A (-3d) |  | 2.9 第6次组会：组员各自制作PPT → 28 | was named 2.10 完成scrapyd及实验七PPT制作; resources 梁远志 [12.5%] → 沈一聪 [31.2%]; baseline start 2020-03-24 → 2020-03-21; baseline finish 2020-03-25 → 2020-03-22 |
| 36 | 2.9 第6次组会：组员各自制作需求分析汇报PPT相应的部分 | 2020-03-24 A → 2020-03-23 A (-1d) | 2020-03-25 A → 2020-03-23 A (-2d) | 2d → 1d | 2.9 第6次组会：组员各自制作PPT → 29, 30, 31, 32, 33, 34, 35 | was named 2.11 完成后端及反爬虫部分PPT制作; resources 沈一聪 [12.5%] → 郭浩隆 [1.2%]; 梁远志 [1.2%]; 沈一聪 [1.2%]; 宋冰晨 [1.2%]; 赵正阳 [1.2%]; baseline start 2020-03-24 → 2020-03-23; baseline finish 2020-03-25 → 2020-03-23 |
| 37 | 2.10 完成Scrapyd及实验七部分PPT |  |  |  | 2.9 第6次组会：组员各自制作PPT → 36 | was named 2.12 形成需求文档1.0; resources 赵正阳 [12.5%] → 梁远志 [12.5%] |
| 38 | 2.11 完成后端及反爬虫部分PPT |  |  |  | 2.9 第6次组会：组员各自制作PPT → 36 | was named 2.13 完成web ui原型1.0; resources 宋冰晨 [37.5%] → 沈一聪 [12.5%] |
| 39 | 2.12 形成需求规格说明书1.0 |  |  |  | 2.9 第6次组会：组员各自制作PPT → 36 | was named 2.14 更新计划书至1.4; resources 郭浩隆 [9.4%] → 赵正阳 [12.5%] |
| 42 | 2.15 整合完成汇报ppt1.0版本 |  |  |  | 35, 36, 37, 38, 39 → 37, 38, 39, 40, 41 | was named 2.15 形成需求文档汇报ppt |

## Version 13 (saved 2020-04-27, file 项目进度计划v4.1.mpp)

Note of the change: 提交MPP7.0

Last finish 2020-04-09 → 2020-04-02 (-7d). Complete tasks 66 → 53.

Added:

| ID | Task | Duration | Start | Finish | Predecessors | Resources |
| --- | --- | --- | --- | --- | --- | --- |
| 35 | 2.8 完成后端及反爬虫部分需求文档 | 2d | 2020-03-21 A | 2020-03-22 A | 28 | 沈一聪 [31.2%] |
| 36 | 2.9 第6次组会：组员各自制作PPT | 1d | 2020-03-23 A | 2020-03-23 A | 29, 30, 33, 34, 35 | 郭浩隆 [1.2%]; 梁远志 [1.2%]; 沈一聪 [1.2%]; 宋冰晨 [1.2%]; 赵正阳 [1.2%] |
| 44 | 2.16 第7次组会：确定对需求文档的修改分工、分配需求评审表格设计和实验8任务 | 1d | 2020-03-27 A | 2020-03-27 A |  | 郭浩隆 [2.5%]; 梁远志 [2.5%]; 沈一聪 [2.5%]; 宋冰晨 [2.5%]; 赵正阳 [2.5%] |

Removed: 40 2.13 完成web ui原型1.0版本; 41 2.14 改进计划书至1.4; 44 2.16 第7次组会：确定需求规格说明书改分工、分配需求评审表格设计和实验8任务; 60 3 软件需求评审; 61 第6周; 62 更新MS Project至4.0; 63 检查F组需求文档，形成12条评审意见; 64 检查F组需求文档，形成14条评审意见; 65 检查G组需求文档，形成10条评审意见; 66 检查G组需求文档，形成8条评审意见; 67 检查G组需求文档，形成6条评审意见; 68 第9次组会：整合对F和G组的评审意见; 69 根据评审意见A-2、4、9、10、19和I-5、7、8、9、10、11、20、21、23形成需求文档v1.2.1，以及完成对应PPT的制作; 70 根据评审意见A-1、3、5和I-3形成需求文档v1.2.2，以及完成对应PPT的制作; 71 根据评审意见A-6和I-12、13、14形成需求文档v1.2.3，以及完成对应PPT的制作; 72 根据评审意见A-15、17、18和I-1、2、18、22、24形成需求文档v1.2.4，以及完成对应PPT的制作; 73 根据评审意见A-7、8、11、12、13、14、16和I-2、4、6、7、15、16、17、18、19形成需求文档v1.2.5，以及完成对应PPT的制作; 74 整合形成第7周课堂汇报PPT

Changed:

| ID | Task | Start | Finish | Duration | Predecessors | Other |
| --- | --- | --- | --- | --- | --- | --- |
| 2 | **1 实验准备** |  |  |  |  | baseline finish 2020-04-09 → 2020-03-19 |
| 28 | 2.1 第5次组会：绘制用例图、分配需求文档 |  |  |  |  | was named 2.1 第5次组会：绘制用例图、给组员分配负责的需求分析文档的部分 |
| 29 | 2.2 完成需求规格说明书1、2节和scrapy需求分析部分 |  |  |  |  | was named 2.2 完成需求规格说明书第1、2节和Scrapy框架的需求分析文档 |
| 30 | 2.3 形成web ui部分需求文档 |  |  |  |  | was named 2.3 形成Web UI部分需求分析文档 |
| 32 | 2.5 更新MS Project文档至2.0 | 2020-03-21 A → 2020-03-20 A (-1d) |  | 2d → 3d | 28 → none | resources 宋冰晨 [12.5%] → 宋冰晨 [8.3%]; baseline start 2020-03-21 → 2020-03-20 |
| 33 | 2.6 完成web ui部分20个RUCM |  |  |  |  | was named 2.6 完成web ui部分10个RUCM |
| 34 | 2.7 完成scrapyd需求文档及数据库部分 |  |  |  |  | was named 2.7 完成Scrapyd需求分析文档、RUCM图、数据库部分文档 |
| 37 | 2.10 完成scrapyd及实验七PPT制作 | 2020-03-21 A → 2020-03-24 A (+3d) | 2020-03-22 A → 2020-03-25 A (+3d) |  | 28 → 36 | was named 2.8 完成需求分析的后端部分以及反爬虫部分文档; resources 沈一聪 [31.2%] → 梁远志 [12.5%]; baseline start 2020-03-21 → 2020-03-24; baseline finish 2020-03-22 → 2020-03-25 |
| 38 | 2.11 完成后端及反爬虫部分PPT制作 | 2020-03-23 A → 2020-03-24 A (+1d) | 2020-03-23 A → 2020-03-25 A (+2d) | 1d → 2d | 29, 30, 31, 32, 33, 34, 37 → 36 | was named 2.9 第6次组会：组员各自制作需求分析汇报PPT相应的部分; resources 郭浩隆 [1.2%]; 梁远志 [1.2%]; 沈一聪 [1.2%]; 宋冰晨 [1.2%]; 赵正阳 [1.2%] → 沈一聪 [12.5%]; baseline start 2020-03-23 → 2020-03-24; baseline finish 2020-03-23 → 2020-03-25 |
| 39 | 2.12 形成需求文档1.0 |  |  |  | 38 → 36 | was named 2.10 完成Scrapyd及实验七部分PPT; resources 梁远志 [12.5%] → 赵正阳 [12.5%] |
| 40 | 2.13 完成web ui原型1.0 |  |  |  | 38 → 36 | was named 2.11 完成后端及反爬虫部分PPT; resources 沈一聪 [12.5%] → 宋冰晨 [37.5%] |
| 41 | 2.14 更新计划书至1.4 |  |  |  | 38 → 36 | was named 2.12 形成需求规格说明书1.0; resources 赵正阳 [12.5%] → 郭浩隆 [9.4%] |
| 42 | 2.15 形成需求文档汇报ppt |  |  |  | 39, 40, 41, 2.13 完成web ui原型1.0版本, 2.14 改进计划书至1.4 → 37, 38, 39, 40, 41 | was named 2.15 整合完成汇报ppt1.0版本 |
| 45 | 2.17 更新MS Project文档至3.0 | 2020-03-28 A → 2020-03-27 A (-1d) |  | 2d → 3d | 2.16 第7次组会：确定需求规格说明书改分工、分配需求评审表格设计和实验8任务 → none | resources 宋冰晨 [6.2%] → 宋冰晨 [4.2%]; baseline start 2020-03-28 → 2020-03-27 |
| 46 | 2.18 扩充需求分析文档的项目背景、用户特点、假定及约束 |  |  |  | 2.16 第7次组会：确定需求规格说明书改分工、分配需求评审表格设计和实验8任务 → 44 |  |
| 47 | 2.19 调研Django | 2020-03-28 A → 2020-03-27 A (-1d) |  | 2d → 3d | 2.16 第7次组会：确定需求规格说明书改分工、分配需求评审表格设计和实验8任务 → none | resources 赵正阳 [25%] → 赵正阳 [16.7%]; baseline start 2020-03-28 → 2020-03-27 |
| 48 | 2.20 形成工作量统计分析报告v1.0 |  |  |  | 2.16 第7次组会：确定需求规格说明书改分工、分配需求评审表格设计和实验8任务 → 44 |  |
| 49 | 2.21 补充了Scrapy框架需求分析的文字描述 |  |  |  | 2.16 第7次组会：确定需求规格说明书改分工、分配需求评审表格设计和实验8任务 → 44 |  |
| 50 | 2.22 扩充需求分析文档的后端需求RUCM文字说明、业务需求 |  |  |  | 2.16 第7次组会：确定需求规格说明书改分工、分配需求评审表格设计和实验8任务 → 44 |  |
| 51 | 2.23 完成需求分析评审表的设计 |  |  |  | 2.16 第7次组会：确定需求规格说明书改分工、分配需求评审表格设计和实验8任务 → 44 |  |
| 52 | 2.24 添加了Scrapyd的介绍、添加了各个RUCM的文字说明 |  |  |  | 2.16 第7次组会：确定需求规格说明书改分工、分配需求评审表格设计和实验8任务 → 44 |  |
| 53 | 2.25 扩充web ui部分RUCM的文字描述 |  |  |  | 2.16 第7次组会：确定需求规格说明书改分工、分配需求评审表格设计和实验8任务 → 44 |  |
| 54 | 2.26 第8次组会：确定编码、PPT分工 |  |  |  | 45, 46, 47, 48, 49, 50, 51, 52, 53 → 46, 48, 49, 50, 51, 52, 53 |  |

## Version 14 (saved 2020-04-27, file 项目进度计划v5.2.mpp)

Note of the change: 提交MPP7.0

Last finish 2020-04-02 → 2020-04-09 (+7d). Complete tasks 53 → 66.

Added:

| ID | Task | Duration | Start | Finish | Predecessors | Constraint | Resources |
| --- | --- | --- | --- | --- | --- | --- | --- |
| 60 | **3 软件需求评审** | 7d | 2020-04-03 A | 2020-04-09 A |  |  |  |
| 61 | **第6周** | 7d | 2020-04-03 A | 2020-04-09 A | 43 |  |  |
| 62 | 3.1 更新MS Project至4.0 | 4d | 2020-04-03 A | 2020-04-06 A |  |  | 宋冰晨 [4.7%] |
| 63 | 3.2 检查F组需求文档，形成12条评审意见 | 1d | 2020-04-06 A | 2020-04-06 A |  | start no earlier than 2020-04-06 | 梁远志 [12.5%] |
| 64 | 3.3 检查F组需求文档，形成14条评审意见 | 1d | 2020-04-06 A | 2020-04-06 A |  | start no earlier than 2020-04-06 | 沈一聪 [37.5%] |
| 65 | 3.4 检查G组需求文档，形成10条评审意见 | 1d | 2020-04-06 A | 2020-04-06 A |  | start no earlier than 2020-04-06 | 宋冰晨 [18.8%] |
| 66 | 3.5 检查G组需求文档，形成8条评审意见 | 1d | 2020-04-06 A | 2020-04-06 A |  | start no earlier than 2020-04-06 | 赵正阳 [12.5%] |
| 67 | 3.6 检查G组需求文档，形成6条评审意见 | 1d | 2020-04-06 A | 2020-04-06 A |  | start no earlier than 2020-04-06 | 郭浩隆 [12.5%] |
| 68 | 3.7 第9次组会：整合对F和G组的评审意见 | 1d | 2020-04-07 A | 2020-04-07 A | 63, 64, 65, 66, 67 |  | 郭浩隆 [5%]; 梁远志 [5%]; 沈一聪 [5%]; 宋冰晨 [5%]; 赵正阳 [5%] |
| 69 | 3.8 根据评审意见A-2、4、9、10、19和I-5、7、8、9、10、11、20、21、23形成需求文档v1.2.1，以及完成对应PPT的制作 | 0.3d | 2020-04-08 A | 2020-04-08 A |  | start no earlier than 2020-04-08 | 赵正阳 [41.7%] |
| 70 | 3.9 根据评审意见A-1、3、5和I-3形成需求文档v1.2.2，以及完成对应PPT的制作 | 0.3d | 2020-04-08 A | 2020-04-08 A | 69 |  | 宋冰晨 [83.3%] |
| 71 | 3.10 根据评审意见A-6和I-12、13、14形成需求文档v1.2.3，以及完成对应PPT的制作 | 0.3d | 2020-04-08 A | 2020-04-08 A | 70 |  | 郭浩隆 [83.3%] |
| 72 | 3.11 根据评审意见A-15、17、18和I-1、2、18、22、24形成需求文档v1.2.4，以及完成对应PPT的 | 0.3d | 2020-04-08 A | 2020-04-09 A | 71 |  | 梁远志 [62.5%] |
| 73 | 3.12 根据评审意见A-7、8、11、12、13、14、16和I-2、4、6、7、15、16、17、18、19形成需求文档v1.2.5，以及完成对应PPT的制作 | 0.3d | 2020-04-09 A | 2020-04-09 A | 72 |  | 沈一聪 [83.3%] |
| 74 | 3.13 整合形成第7周课堂汇报PPT | 0.5d | 2020-04-09 A | 2020-04-09 A | 73 |  | 赵正阳 [12.5%] |

## Version 15 (saved 2020-04-27, file 项目进度计划v6.0.mpp)

Note of the change: 提交MPP7.0

Last finish 2020-04-09 → 2020-04-17 (+8d). Complete tasks 66 → 79.

Added:

| ID | Task | Duration | Start | Finish | Predecessors | Constraint | Resources |
| --- | --- | --- | --- | --- | --- | --- | --- |
| 40 | 2.13 完成web ui原型1.0版本 | 2d | 2020-03-24 A | 2020-03-25 A | 36 |  | 宋冰晨 [37.5%] |
| 41 | 2.14 改进计划书至1.4 | 2d | 2020-03-24 A | 2020-03-25 A | 36 |  | 郭浩隆 [9.4%] |
| 44 | 2.16 第7次组会：确定需求规格说明书改分工、分配需求评审表格设计和实验8任务 | 1d | 2020-03-27 A | 2020-03-27 A |  |  | 郭浩隆 [2.5%]; 梁远志 [2.5%]; 沈一聪 [2.5%]; 宋冰晨 [2.5%]; 赵正阳 [2.5%] |
| 62 | 更新MS Project至4.0 | 4d | 2020-04-03 A | 2020-04-06 A |  |  | 宋冰晨 [4.7%] |
| 63 | 检查F组需求文档，形成12条评审意见 | 1d | 2020-04-06 A | 2020-04-06 A |  | start no earlier than 2020-04-06 | 梁远志 [12.5%] |
| 64 | 检查F组需求文档，形成14条评审意见 | 1d | 2020-04-06 A | 2020-04-06 A |  | start no earlier than 2020-04-06 | 沈一聪 [37.5%] |
| 65 | 检查G组需求文档，形成10条评审意见 | 1d | 2020-04-06 A | 2020-04-06 A |  | start no earlier than 2020-04-06 | 宋冰晨 [18.8%] |
| 66 | 检查G组需求文档，形成8条评审意见 | 1d | 2020-04-06 A | 2020-04-06 A |  | start no earlier than 2020-04-06 | 赵正阳 [12.5%] |
| 67 | 检查G组需求文档，形成6条评审意见 | 1d | 2020-04-06 A | 2020-04-06 A |  | start no earlier than 2020-04-06 | 郭浩隆 [12.5%] |
| 68 | 第9次组会：整合对F和G组的评审意见 | 1d | 2020-04-07 A | 2020-04-07 A | 63, 64, 65, 66, 67 |  | 郭浩隆 [5%]; 梁远志 [5%]; 沈一聪 [5%]; 宋冰晨 [5%]; 赵正阳 [5%] |
| 69 | 根据评审意见A-2、4、9、10、19和I-5、7、8、9、10、11、20、21、23形成需求文档v1.2.1，以及完成对应PPT的制作 | 0.3d | 2020-04-08 A | 2020-04-08 A | 68 |  | 赵正阳 [41.7%] |
| 70 | 根据评审意见A-1、3、5和I-3形成需求文档v1.2.2，以及完成对应PPT的制作 | 0.3d | 2020-04-08 A | 2020-04-08 A | 69 |  | 宋冰晨 [83.3%] |
| 71 | 根据评审意见A-6和I-12、13、14形成需求文档v1.2.3，以及完成对应PPT的制作 | 0.3d | 2020-04-08 A | 2020-04-08 A | 70 |  | 郭浩隆 [83.3%] |
| 72 | 根据评审意见A-15、17、18和I-1、2、18、22、24形成需求文档v1.2.4，以及完成对应PPT的制作 | 0.3d | 2020-04-08 A | 2020-04-09 A | 71 |  | 梁远志 [62.5%] |
| 73 | 根据评审意见A-7、8、11、12、13、14、16和I-2、4、6、7、15、16、17、18、19形成需求文档v1.2.5，以及完成对应PPT的制作 | 0.3d | 2020-04-09 A | 2020-04-09 A | 72 |  | 沈一聪 [83.3%] |
| 74 | 整合形成第7周课堂汇报PPT | 0.5d | 2020-04-09 A | 2020-04-09 A | 73, 69, 70, 71, 72 |  | 赵正阳 [12.5%] |
| 75 | **第7周** | 7d | 2020-04-10 A | 2020-04-16 A | 61 |  |  |
| 81 | 检查A组需求文档，形成17条评审意见 | 1d | 2020-04-13 A | 2020-04-13 A |  | start no earlier than 2020-04-13 | 沈一聪 [25%] |
| 82 | 第10次组会：整合对A和I组的评审意见 | 1d | 2020-04-14 A | 2020-04-14 A | 77, 78, 79, 80, 81 |  | 郭浩隆 [2.5%]; 梁远志 [2.5%]; 沈一聪 [2.5%]; 宋冰晨 [2.5%]; 赵正阳 [2.5%] |
| 88 | **期中** | 1d | 2020-04-17 A | 2020-04-17 A |  |  |  |
| 89 | **第8周** | 1d | 2020-04-17 A | 2020-04-17 A | 75 |  |  |

Removed: 35 2.8 完成后端及反爬虫部分需求文档; 36 2.9 第6次组会：组员各自制作PPT; 44 2.16 第7次组会：确定对需求文档的修改分工、分配需求评审表格设计和实验8任务; 66 3.5 检查G组需求文档，形成8条评审意见; 72 3.11 根据评审意见A-15、17、18和I-1、2、18、22、24形成需求文档v1.2.4，以及完成对应PPT的

Changed:

| ID | Task | Start | Finish | Duration | Predecessors | Other |
| --- | --- | --- | --- | --- | --- | --- |
| 2 | **1 实验准备** |  |  |  |  | baseline finish 2020-03-19 → 2020-04-16 |
| 17 | 1.13 完成计划书的甘特图（MS Project1.0）、计算公式部分 |  |  |  |  | was named 1.13 完成计划书的甘特图、计算公式部分 |
| 28 | 2.1 第5次组会：绘制用例图、给组员分配负责的需求分析文档的部分 |  |  |  |  | was named 2.1 第5次组会：绘制用例图、分配需求文档 |
| 29 | 2.2 完成需求规格说明书第1、2节和Scrapy框架的需求分析文档 |  |  |  |  | was named 2.2 完成需求规格说明书1、2节和scrapy需求分析部分 |
| 30 | 2.3 形成Web UI部分需求分析文档 |  |  |  |  | was named 2.3 形成web ui部分需求文档 |
| 32 | 2.5 更新MS Project文档至2.0 | 2020-03-20 A → 2020-03-21 A (+1d) |  | 3d → 2d | none → 28 | resources 宋冰晨 [8.3%] → 宋冰晨 [12.5%]; baseline start 2020-03-20 → 2020-03-21 |
| 33 | 2.6 完成web ui部分10个RUCM |  |  |  |  | was named 2.6 完成web ui部分20个RUCM |
| 34 | 2.7 完成Scrapyd需求分析文档、RUCM图、数据库部分文档 |  |  |  |  | was named 2.7 完成scrapyd需求文档及数据库部分 |
| 35 | 2.8 完成需求分析的后端部分以及反爬虫部分文档 | 2020-03-24 A → 2020-03-21 A (-3d) | 2020-03-25 A → 2020-03-22 A (-3d) |  | 2.9 第6次组会：组员各自制作PPT → 28 | was named 2.10 完成scrapyd及实验七PPT制作; resources 梁远志 [12.5%] → 沈一聪 [31.2%]; baseline start 2020-03-24 → 2020-03-21; baseline finish 2020-03-25 → 2020-03-22 |
| 36 | 2.9 第6次组会：组员各自制作需求分析汇报PPT相应的部分 | 2020-03-24 A → 2020-03-23 A (-1d) | 2020-03-25 A → 2020-03-23 A (-2d) | 2d → 1d | 2.9 第6次组会：组员各自制作PPT → 29, 30, 31, 32, 33, 34, 35 | was named 2.11 完成后端及反爬虫部分PPT制作; resources 沈一聪 [12.5%] → 郭浩隆 [1.2%]; 梁远志 [1.2%]; 沈一聪 [1.2%]; 宋冰晨 [1.2%]; 赵正阳 [1.2%]; baseline start 2020-03-24 → 2020-03-23; baseline finish 2020-03-25 → 2020-03-23 |
| 37 | 2.10 完成Scrapyd及实验七部分PPT |  |  |  | 2.9 第6次组会：组员各自制作PPT → 36 | was named 2.12 形成需求文档1.0; resources 赵正阳 [12.5%] → 梁远志 [12.5%] |
| 38 | 2.11 完成后端及反爬虫部分PPT |  |  |  | 2.9 第6次组会：组员各自制作PPT → 36 | was named 2.13 完成web ui原型1.0; resources 宋冰晨 [37.5%] → 沈一聪 [12.5%] |
| 39 | 2.12 形成需求规格说明书1.0 |  |  |  | 2.9 第6次组会：组员各自制作PPT → 36 | was named 2.14 更新计划书至1.4; resources 郭浩隆 [9.4%] → 赵正阳 [12.5%] |
| 42 | 2.15 整合完成汇报ppt1.0版本 |  |  |  | 35, 36, 37, 38, 39 → 37, 38, 39, 40, 41 | was named 2.15 形成需求文档汇报ppt |
| 45 | 2.17 更新MS Project文档至3.0 | 2020-03-27 A → 2020-03-28 A (+1d) |  | 3d → 2d | none → 44 | resources 宋冰晨 [4.2%] → 宋冰晨 [6.2%]; baseline start 2020-03-27 → 2020-03-28 |
| 46 | 2.18 扩充需求分析文档的项目背景、用户特点、假定及约束 |  |  |  | 2.16 第7次组会：确定对需求文档的修改分工、分配需求评审表格设计和实验8任务 → 44 |  |
| 47 | 2.19 调研Django | 2020-03-27 A → 2020-03-28 A (+1d) |  | 3d → 2d | none → 44 | resources 赵正阳 [16.7%] → 赵正阳 [25%]; baseline start 2020-03-27 → 2020-03-28 |
| 48 | 2.20 形成工作量统计分析报告v1.0 |  |  |  | 2.16 第7次组会：确定对需求文档的修改分工、分配需求评审表格设计和实验8任务 → 44 |  |
| 49 | 2.21 补充了Scrapy框架需求分析的文字描述 |  |  |  | 2.16 第7次组会：确定对需求文档的修改分工、分配需求评审表格设计和实验8任务 → 44 |  |
| 50 | 2.22 扩充需求分析文档的后端需求RUCM文字说明、业务需求 |  |  |  | 2.16 第7次组会：确定对需求文档的修改分工、分配需求评审表格设计和实验8任务 → 44 |  |
| 51 | 2.23 完成需求分析评审表的设计 |  |  |  | 2.16 第7次组会：确定对需求文档的修改分工、分配需求评审表格设计和实验8任务 → 44 |  |
| 52 | 2.24 添加了Scrapyd的介绍、添加了各个RUCM的文字说明 |  |  |  | 2.16 第7次组会：确定对需求文档的修改分工、分配需求评审表格设计和实验8任务 → 44 |  |
| 53 | 2.25 扩充web ui部分RUCM的文字描述 |  |  |  | 2.16 第7次组会：确定对需求文档的修改分工、分配需求评审表格设计和实验8任务 → 44 |  |
| 54 | 2.26 第8次组会：确定编码、PPT分工 |  |  |  | 46, 48, 49, 50, 51, 52, 53 → 45, 46, 47, 48, 49, 50, 51, 52, 53 |  |
| 60 | **3 软件需求评审** |  | 2020-04-09 A → 2020-04-16 A (+7d) | 7d → 14d |  | baseline finish 2020-04-09 → 2020-04-16 |
| 76 | 更新MS Project至5.0 | 2020-04-06 A → 2020-04-10 A (+4d) | 2020-04-06 A → 2020-04-13 A (+7d) | 1d → 4d |  | was named 3.2 检查F组需求文档，形成12条评审意见; constraint start no earlier than 2020-04-06 → none; resources 梁远志 [12.5%] → 宋冰晨 [3.1%]; baseline start 2020-04-06 → 2020-04-10; baseline finish 2020-04-06 → 2020-04-13 |
| 77 | 检查I组需求文档，形成7条评审意见 | 2020-04-06 A → 2020-04-13 A (+7d) | 2020-04-06 A → 2020-04-13 A (+7d) |  |  | was named 3.3 检查F组需求文档，形成14条评审意见; constraint start no earlier than 2020-04-06 → start no earlier than 2020-04-13; resources 沈一聪 [37.5%] → 郭浩隆 [31.2%]; baseline start 2020-04-06 → 2020-04-13; baseline finish 2020-04-06 → 2020-04-13 |
| 78 | 检查I组需求文档，形成22条评审意见 | 2020-04-07 A → 2020-04-13 A (+6d) | 2020-04-07 A → 2020-04-13 A (+6d) |  | 76, 77, 87, 3.5 检查G组需求文档，形成8条评审意见, 80 → none | was named 3.7 第9次组会：整合对F和G组的评审意见; constraint none → start no earlier than 2020-04-13; resources 郭浩隆 [5%]; 梁远志 [5%]; 沈一聪 [5%]; 宋冰晨 [5%]; 赵正阳 [5%] → 梁远志 [25%]; baseline start 2020-04-07 → 2020-04-13; baseline finish 2020-04-07 → 2020-04-13 |
| 79 | 检查I组需求文档，形成18条评审意见 | 2020-04-08 A → 2020-04-13 A (+5d) | 2020-04-08 A → 2020-04-13 A (+5d) | 0.3d → 1d |  | was named 3.8 根据评审意见A-2、4、9、10、19和I-5、7、8、9、10、11、20、21、23形成需求文档v1.2.1，以及完成对应PPT的制作; constraint start no earlier than 2020-04-08 → start no earlier than 2020-04-13; resources 赵正阳 [41.7%] → 宋冰晨 [25%]; baseline start 2020-04-08 → 2020-04-13; baseline finish 2020-04-08 → 2020-04-13 |
| 80 | 检查A组需求文档，形成6条评审意见 | 2020-04-06 A → 2020-04-13 A (+7d) | 2020-04-06 A → 2020-04-13 A (+7d) |  |  | was named 3.6 检查G组需求文档，形成6条评审意见; constraint start no earlier than 2020-04-06 → start no earlier than 2020-04-13; resources 郭浩隆 [12.5%] → 赵正阳 [12.5%]; baseline start 2020-04-06 → 2020-04-13; baseline finish 2020-04-06 → 2020-04-13 |
| 83 | 根据评审意见F-1、2、9、10、11、15、16、17、18和G-1、2、6、10、11、14、15、16、21、22形成需求文档v1.3.0，以及完成对应PPT的制作 | 2020-04-08 A → 2020-04-15 A (+7d) | 2020-04-08 A → 2020-04-15 A (+7d) | 0.3d → 0.4d | 86 → 82 | was named 3.10 根据评审意见A-6和I-12、13、14形成需求文档v1.2.3，以及完成对应PPT的制作; resources 郭浩隆 [83.3%] → 赵正阳 [62.5%]; baseline start 2020-04-08 → 2020-04-15; baseline finish 2020-04-08 → 2020-04-15 |
| 84 | 根据评审意见F-4、5和G-3、7、8、9、18形成需求文档v1.3.1，以及完成对应PPT的制作 | 2020-04-09 A → 2020-04-15 A (+6d) | 2020-04-09 A → 2020-04-15 A (+6d) | 0.5d → 0.4d | 85 → 83 | was named 3.13 整合形成第7周课堂汇报PPT; resources 赵正阳 [12.5%] → 沈一聪 [62.5%]; baseline start 2020-04-09 → 2020-04-15; baseline finish 2020-04-09 → 2020-04-15 |
| 85 | 根据评审意见F-3和G-4、5、17、19、20形成需求文档v1.3.2，以及完成对应PPT的制作 | 2020-04-09 A → 2020-04-15 A (+6d) | 2020-04-09 A → 2020-04-16 A (+7d) | 0.3d → 0.4d | 3.11 根据评审意见A-15、17、18和I-1、2、18、22、24形成需求文档v1.2.4，以及完成对应PPT的 → 84 | was named 3.12 根据评审意见A-7、8、11、12、13、14、16和I-2、4、6、7、15、16、17、18、19形成需求文档v1.2.5，以及完成对应PPT的制作; resources 沈一聪 [83.3%] → 梁远志 [62.5%]; baseline start 2020-04-09 → 2020-04-15; baseline finish 2020-04-09 → 2020-04-16 |
| 86 | 根据评审意见F-6、7、8、12、13、14、19、20、21和G-12、13形成需求文档v1.3.3，以及完成对应PPT的制作 | 2020-04-08 A → 2020-04-16 A (+8d) | 2020-04-08 A → 2020-04-16 A (+8d) | 0.3d → 0.4d | 79 → 85 | was named 3.9 根据评审意见A-1、3、5和I-3形成需求文档v1.2.2，以及完成对应PPT的制作; resources 宋冰晨 [83.3%] → 宋冰晨 [78.1%]; baseline start 2020-04-08 → 2020-04-16; baseline finish 2020-04-08 → 2020-04-16 |
| 87 | 整合形成第8周课堂汇报PPT | 2020-04-06 A → 2020-04-16 A (+10d) | 2020-04-06 A → 2020-04-16 A (+10d) | 1d → 0.4d | none → 83, 84, 85, 86 | was named 3.4 检查G组需求文档，形成10条评审意见; constraint start no earlier than 2020-04-06 → none; resources 宋冰晨 [18.8%] → 赵正阳 [15.6%]; baseline start 2020-04-06 → 2020-04-16; baseline finish 2020-04-06 → 2020-04-16 |
| 90 | 更新MS Project至6.0 | 2020-04-03 A → 2020-04-17 A (+14d) | 2020-04-06 A → 2020-04-17 A (+11d) | 4d → 1d |  | was named 3.1 更新MS Project至4.0; resources 宋冰晨 [4.7%] → 宋冰晨 [25%]; baseline start 2020-04-03 → 2020-03-06; baseline finish 2020-04-06 → 2020-03-06 |

## Version 16 (saved 2020-04-27, file 项目进度计划v6.1.mpp)

Note of the change: 提交MPP7.0

Last finish 2020-04-17 → 2020-04-16 (-1d). Complete tasks 79 → 78.

Added:

| ID | Task | Duration | Start | Finish | Predecessors | Constraint | Resources |
| --- | --- | --- | --- | --- | --- | --- | --- |
| 35 | 2.8 完成后端及反爬虫部分需求文档 | 2d | 2020-03-21 A | 2020-03-22 A | 28 |  | 沈一聪 [31.2%] |
| 36 | 2.9 第6次组会：组员各自制作PPT | 1d | 2020-03-23 A | 2020-03-23 A | 29, 30, 33, 34, 35 |  | 郭浩隆 [1.2%]; 梁远志 [1.2%]; 沈一聪 [1.2%]; 宋冰晨 [1.2%]; 赵正阳 [1.2%] |
| 44 | 2.16 第7次组会：确定对需求文档的修改分工、分配需求评审表格设计和实验8任务 | 1d | 2020-03-27 A | 2020-03-27 A |  |  | 郭浩隆 [2.5%]; 梁远志 [2.5%]; 沈一聪 [2.5%]; 宋冰晨 [2.5%]; 赵正阳 [2.5%] |
| 66 | 3.5 检查G组需求文档，形成8条评审意见 | 1d | 2020-04-06 A | 2020-04-06 A |  | start no earlier than 2020-04-06 | 赵正阳 [12.5%] |
| 72 | 3.11 根据评审意见A-15、17、18和I-1、2、18、22、24形成需求文档v1.2.4，以及完成对应PPT的 | 0.3d | 2020-04-08 A | 2020-04-09 A | 71 |  | 梁远志 [62.5%] |
| 78 | 3.16 检查I组需求文档，形成22条评审意见 | 1d | 2020-04-13 A | 2020-04-13 A |  | start no earlier than 2020-04-13 | 梁远志 [25%] |
| 79 | 3.17 检查I组需求文档，形成18条评审意见 | 1d | 2020-04-13 A | 2020-04-13 A |  | start no earlier than 2020-04-13 | 宋冰晨 [25%] |
| 80 | 3.18 检查A组需求文档，形成6条评审意见 | 1d | 2020-04-13 A | 2020-04-13 A |  | start no earlier than 2020-04-13 | 赵正阳 [12.5%] |
| 81 | 3.19 检查A组需求文档，形成17条评审意见 | 1d | 2020-04-13 A | 2020-04-13 A |  | start no earlier than 2020-04-13 | 沈一聪 [25%] |
| 82 | 3.20 第10次组会：整合对A和I组的评审意见 | 1d | 2020-04-14 A | 2020-04-14 A | 77, 78, 79, 80, 81 |  | 郭浩隆 [2.5%]; 梁远志 [2.5%]; 沈一聪 [2.5%]; 宋冰晨 [2.5%]; 赵正阳 [2.5%] |
| 83 | 3.21 根据评审意见F-1、2、9、10、11、15、16、17、18和G-1、2、6、10、11、14、15、16、21、22形成需求文档v1.3.0，以及完成对应PPT的制作 | 0.4d | 2020-04-15 A | 2020-04-15 A |  | start no earlier than 2020-04-15 | 赵正阳 [62.5%] |
| 84 | 3.22 根据评审意见F-4、5和G-3、7、8、9、18形成需求文档v1.3.1，以及完成对应PPT的制作 | 0.4d | 2020-04-15 A | 2020-04-15 A | 83 |  | 沈一聪 [62.5%] |
| 85 | 3.23 根据评审意见F-3和G-4、5、17、19、20形成需求文档v1.3.2，以及完成对应PPT的制作 | 0.4d | 2020-04-15 A | 2020-04-16 A | 84 |  | 梁远志 [62.5%] |
| 86 | 3.24 根据评审意见F-6、7、8、12、13、14、19、20、21和G-12、13形成需求文档v1.3.3，以及完成对应PPT的制作 | 0.4d | 2020-04-16 A | 2020-04-16 A | 85 |  | 宋冰晨 [78.1%] |
| 87 | 3.25 整合形成第8周课堂汇报PPT | 0.4d | 2020-04-16 A | 2020-04-16 A | 86 |  | 赵正阳 [15.6%] |

Removed: 40 2.13 完成web ui原型1.0版本; 41 2.14 改进计划书至1.4; 44 2.16 第7次组会：确定需求规格说明书改分工、分配需求评审表格设计和实验8任务; 62 更新MS Project至4.0; 63 检查F组需求文档，形成12条评审意见; 64 检查F组需求文档，形成14条评审意见; 65 检查G组需求文档，形成10条评审意见; 66 检查G组需求文档，形成8条评审意见; 67 检查G组需求文档，形成6条评审意见; 68 第9次组会：整合对F和G组的评审意见; 69 根据评审意见A-2、4、9、10、19和I-5、7、8、9、10、11、20、21、23形成需求文档v1.2.1，以及完成对应PPT的制作; 70 根据评审意见A-1、3、5和I-3形成需求文档v1.2.2，以及完成对应PPT的制作; 71 根据评审意见A-6和I-12、13、14形成需求文档v1.2.3，以及完成对应PPT的制作; 72 根据评审意见A-15、17、18和I-1、2、18、22、24形成需求文档v1.2.4，以及完成对应PPT的制作; 73 根据评审意见A-7、8、11、12、13、14、16和I-2、4、6、7、15、16、17、18、19形成需求文档v1.2.5，以及完成对应PPT的制作; 74 整合形成第7周课堂汇报PPT; 82 第10次组会：整合对A和I组的评审意见; 88 期中

Changed:

| ID | Task | Start | Finish | Duration | Predecessors | Other |
| --- | --- | --- | --- | --- | --- | --- |
| 2 | **1 实验准备** |  |  |  |  | baseline finish 2020-04-16 → 2020-03-19 |
| 17 | 1.13 完成计划书的甘特图、计算公式部分 |  |  |  |  | was named 1.13 完成计划书的甘特图（MS Project1.0）、计算公式部分 |
| 28 | 2.1 第5次组会：绘制用例图、分配需求文档 |  |  |  |  | was named 2.1 第5次组会：绘制用例图、给组员分配负责的需求分析文档的部分 |
| 29 | 2.2 完成需求规格说明书1、2节和scrapy需求分析部分 |  |  |  |  | was named 2.2 完成需求规格说明书第1、2节和Scrapy框架的需求分析文档 |
| 30 | 2.3 形成web ui部分需求文档 |  |  |  |  | was named 2.3 形成Web UI部分需求分析文档 |
| 32 | 2.5 更新MS Project文档至2.0 | 2020-03-21 A → 2020-03-20 A (-1d) |  | 2d → 3d | 28 → none | resources 宋冰晨 [12.5%] → 宋冰晨 [8.3%]; baseline start 2020-03-21 → 2020-03-20 |
| 33 | 2.6 完成web ui部分20个RUCM |  |  |  |  | was named 2.6 完成web ui部分10个RUCM |
| 34 | 2.7 完成scrapyd需求文档及数据库部分 |  |  |  |  | was named 2.7 完成Scrapyd需求分析文档、RUCM图、数据库部分文档 |
| 37 | 2.10 完成scrapyd及实验七PPT制作 | 2020-03-21 A → 2020-03-24 A (+3d) | 2020-03-22 A → 2020-03-25 A (+3d) |  | 28 → 36 | was named 2.8 完成需求分析的后端部分以及反爬虫部分文档; resources 沈一聪 [31.2%] → 梁远志 [12.5%]; baseline start 2020-03-21 → 2020-03-24; baseline finish 2020-03-22 → 2020-03-25 |
| 38 | 2.11 完成后端及反爬虫部分PPT制作 | 2020-03-23 A → 2020-03-24 A (+1d) | 2020-03-23 A → 2020-03-25 A (+2d) | 1d → 2d | 29, 30, 31, 32, 33, 34, 37 → 36 | was named 2.9 第6次组会：组员各自制作需求分析汇报PPT相应的部分; resources 郭浩隆 [1.2%]; 梁远志 [1.2%]; 沈一聪 [1.2%]; 宋冰晨 [1.2%]; 赵正阳 [1.2%] → 沈一聪 [12.5%]; baseline start 2020-03-23 → 2020-03-24; baseline finish 2020-03-23 → 2020-03-25 |
| 39 | 2.12 形成需求文档1.0 |  |  |  | 38 → 36 | was named 2.10 完成Scrapyd及实验七部分PPT; resources 梁远志 [12.5%] → 赵正阳 [12.5%] |
| 40 | 2.13 完成web ui原型1.0 |  |  |  | 38 → 36 | was named 2.11 完成后端及反爬虫部分PPT; resources 沈一聪 [12.5%] → 宋冰晨 [37.5%] |
| 41 | 2.14 更新计划书至1.4 |  |  |  | 38 → 36 | was named 2.12 形成需求规格说明书1.0; resources 赵正阳 [12.5%] → 郭浩隆 [9.4%] |
| 42 | 2.15 形成需求文档汇报ppt |  |  |  | 39, 40, 41, 2.13 完成web ui原型1.0版本, 2.14 改进计划书至1.4 → 37, 38, 39, 40, 41 | was named 2.15 整合完成汇报ppt1.0版本 |
| 45 | 2.17 更新MS Project文档至3.0 | 2020-03-28 A → 2020-03-27 A (-1d) |  | 2d → 3d | 2.16 第7次组会：确定需求规格说明书改分工、分配需求评审表格设计和实验8任务 → none | resources 宋冰晨 [6.2%] → 宋冰晨 [4.2%]; baseline start 2020-03-28 → 2020-03-27 |
| 46 | 2.18 扩充需求分析文档的项目背景、用户特点、假定及约束 |  |  |  | 2.16 第7次组会：确定需求规格说明书改分工、分配需求评审表格设计和实验8任务 → 44 |  |
| 47 | 2.19 调研Django | 2020-03-28 A → 2020-03-27 A (-1d) |  | 2d → 3d | 2.16 第7次组会：确定需求规格说明书改分工、分配需求评审表格设计和实验8任务 → none | resources 赵正阳 [25%] → 赵正阳 [16.7%]; baseline start 2020-03-28 → 2020-03-27 |
| 48 | 2.20 形成工作量统计分析报告v1.0 |  |  |  | 2.16 第7次组会：确定需求规格说明书改分工、分配需求评审表格设计和实验8任务 → 44 |  |
| 49 | 2.21 补充了Scrapy框架需求分析的文字描述 |  |  |  | 2.16 第7次组会：确定需求规格说明书改分工、分配需求评审表格设计和实验8任务 → 44 |  |
| 50 | 2.22 扩充需求分析文档的后端需求RUCM文字说明、业务需求 |  |  |  | 2.16 第7次组会：确定需求规格说明书改分工、分配需求评审表格设计和实验8任务 → 44 |  |
| 51 | 2.23 完成需求分析评审表的设计 |  |  |  | 2.16 第7次组会：确定需求规格说明书改分工、分配需求评审表格设计和实验8任务 → 44 |  |
| 52 | 2.24 添加了Scrapyd的介绍、添加了各个RUCM的文字说明 |  |  |  | 2.16 第7次组会：确定需求规格说明书改分工、分配需求评审表格设计和实验8任务 → 44 |  |
| 53 | 2.25 扩充web ui部分RUCM的文字描述 |  |  |  | 2.16 第7次组会：确定需求规格说明书改分工、分配需求评审表格设计和实验8任务 → 44 |  |
| 54 | 2.26 第8次组会：确定编码、PPT分工 |  |  |  | 45, 46, 47, 48, 49, 50, 51, 52, 53 → 46, 48, 49, 50, 51, 52, 53 |  |
| 62 | 3.1 更新MS Project至4.0 | 2020-04-17 A → 2020-04-03 A (-14d) | 2020-04-17 A → 2020-04-06 A (-11d) | 1d → 4d |  | was named 更新MS Project至6.0; resources 宋冰晨 [25%] → 宋冰晨 [4.7%]; baseline start 2020-03-06 → 2020-04-03; baseline finish 2020-03-06 → 2020-04-06 |
| 63 | 3.2 检查F组需求文档，形成12条评审意见 | 2020-04-10 A → 2020-04-06 A (-4d) | 2020-04-13 A → 2020-04-06 A (-7d) | 4d → 1d |  | was named 更新MS Project至5.0; constraint none → start no earlier than 2020-04-06; resources 宋冰晨 [3.1%] → 梁远志 [12.5%]; baseline start 2020-04-10 → 2020-04-06; baseline finish 2020-04-13 → 2020-04-06 |
| 64 | 3.3 检查F组需求文档，形成14条评审意见 | 2020-04-13 A → 2020-04-06 A (-7d) | 2020-04-13 A → 2020-04-06 A (-7d) |  |  | was named 检查I组需求文档，形成7条评审意见; constraint start no earlier than 2020-04-13 → start no earlier than 2020-04-06; resources 郭浩隆 [31.2%] → 沈一聪 [37.5%]; baseline start 2020-04-13 → 2020-04-06; baseline finish 2020-04-13 → 2020-04-06 |
| 65 | 3.4 检查G组需求文档，形成10条评审意见 | 2020-04-16 A → 2020-04-06 A (-10d) | 2020-04-16 A → 2020-04-06 A (-10d) | 0.4d → 1d | 71, 74, 73, 70 → none | was named 整合形成第8周课堂汇报PPT; constraint none → start no earlier than 2020-04-06; resources 赵正阳 [15.6%] → 宋冰晨 [18.8%]; baseline start 2020-04-16 → 2020-04-06; baseline finish 2020-04-16 → 2020-04-06 |
| 67 | 3.6 检查G组需求文档，形成6条评审意见 | 2020-04-13 A → 2020-04-06 A (-7d) | 2020-04-13 A → 2020-04-06 A (-7d) |  |  | was named 检查A组需求文档，形成6条评审意见; constraint start no earlier than 2020-04-13 → start no earlier than 2020-04-06; resources 赵正阳 [12.5%] → 郭浩隆 [12.5%]; baseline start 2020-04-13 → 2020-04-06; baseline finish 2020-04-13 → 2020-04-06 |
| 68 | 3.7 第9次组会：整合对F和G组的评审意见 | 2020-04-13 A → 2020-04-07 A (-6d) | 2020-04-13 A → 2020-04-07 A (-6d) |  | none → 63, 64, 65, 66, 67 | was named 检查I组需求文档，形成22条评审意见; constraint start no earlier than 2020-04-13 → none; resources 梁远志 [25%] → 郭浩隆 [5%]; 梁远志 [5%]; 沈一聪 [5%]; 宋冰晨 [5%]; 赵正阳 [5%]; baseline start 2020-04-13 → 2020-04-07; baseline finish 2020-04-13 → 2020-04-07 |
| 69 | 3.8 根据评审意见A-2、4、9、10、19和I-5、7、8、9、10、11、20、21、23形成需求文档v1.2.1，以及完成对应PPT的制作 | 2020-04-13 A → 2020-04-08 A (-5d) | 2020-04-13 A → 2020-04-08 A (-5d) | 1d → 0.3d |  | was named 检查I组需求文档，形成18条评审意见; constraint start no earlier than 2020-04-13 → start no earlier than 2020-04-08; resources 宋冰晨 [25%] → 赵正阳 [41.7%]; baseline start 2020-04-13 → 2020-04-08; baseline finish 2020-04-13 → 2020-04-08 |
| 70 | 3.9 根据评审意见A-1、3、5和I-3形成需求文档v1.2.2，以及完成对应PPT的制作 | 2020-04-16 A → 2020-04-08 A (-8d) | 2020-04-16 A → 2020-04-08 A (-8d) | 0.4d → 0.3d | 73 → 69 | was named 根据评审意见F-6、7、8、12、13、14、19、20、21和G-12、13形成需求文档v1.3.3，以及完成对应PPT的制作; resources 宋冰晨 [78.1%] → 宋冰晨 [83.3%]; baseline start 2020-04-16 → 2020-04-08; baseline finish 2020-04-16 → 2020-04-08 |
| 71 | 3.10 根据评审意见A-6和I-12、13、14形成需求文档v1.2.3，以及完成对应PPT的制作 | 2020-04-15 A → 2020-04-08 A (-7d) | 2020-04-15 A → 2020-04-08 A (-7d) | 0.4d → 0.3d | 第10次组会：整合对A和I组的评审意见 → 70 | was named 根据评审意见F-1、2、9、10、11、15、16、17、18和G-1、2、6、10、11、14、15、16、21、22形成需求文档v1.3.0，以及完成对应PPT的制作; resources 赵正阳 [62.5%] → 郭浩隆 [83.3%]; baseline start 2020-04-15 → 2020-04-08; baseline finish 2020-04-15 → 2020-04-08 |
| 73 | 3.12 根据评审意见A-7、8、11、12、13、14、16和I-2、4、6、7、15、16、17、18、19形成需求文档v1.2.5，以及完成对应PPT的制作 | 2020-04-15 A → 2020-04-09 A (-6d) | 2020-04-16 A → 2020-04-09 A (-7d) | 0.4d → 0.3d | 74 → 72 | was named 根据评审意见F-3和G-4、5、17、19、20形成需求文档v1.3.2，以及完成对应PPT的制作; resources 梁远志 [62.5%] → 沈一聪 [83.3%]; baseline start 2020-04-15 → 2020-04-09; baseline finish 2020-04-16 → 2020-04-09 |
| 74 | 3.13 整合形成第7周课堂汇报PPT | 2020-04-15 A → 2020-04-09 A (-6d) | 2020-04-15 A → 2020-04-09 A (-6d) | 0.4d → 0.5d | 71 → 73 | was named 根据评审意见F-4、5和G-3、7、8、9、18形成需求文档v1.3.1，以及完成对应PPT的制作; resources 沈一聪 [62.5%] → 赵正阳 [12.5%]; baseline start 2020-04-15 → 2020-04-09; baseline finish 2020-04-15 → 2020-04-09 |
| 76 | 3.14 更新MS Project至5.0 | 2020-04-13 A → 2020-04-10 A (-3d) |  | 1d → 4d |  | was named 检查A组需求文档，形成17条评审意见; constraint start no earlier than 2020-04-13 → none; resources 沈一聪 [25%] → 宋冰晨 [3.1%]; baseline start 2020-04-13 → 2020-04-10 |
| 77 | 3.15 检查I组需求文档，形成7条评审意见 | 2020-04-17 A → 2020-04-13 A (-4d) | 2020-04-17 A → 2020-04-13 A (-4d) |  | 75 → none | was named 第8周; constraint none → start no earlier than 2020-04-13; resources none → 郭浩隆 [31.2%]; baseline start 2020-03-06 → 2020-04-13; baseline finish 2020-03-06 → 2020-04-13 |

## Version 17 (saved 2020-04-27, file 项目进度计划v7.0.mpp)

Note of the change: 提交MPP7.0

Last finish 2020-04-16 → 2020-04-23 (+7d). Complete tasks 78 → 97.

Added:

| ID | Task | Duration | Start | Finish | Predecessors | Constraint | Resources |
| --- | --- | --- | --- | --- | --- | --- | --- |
| 88 | **4 软件设计与实现** | 7d | 2020-04-17 A | 2020-04-23 A |  |  |  |
| 89 | **第8周** | 7d | 2020-04-17 A | 2020-04-23 A | 75 |  |  |
| 90 | 4.1 第11次组会：确定对评审组检查工作和初步开发工作的分工 | 1d | 2020-04-17 A | 2020-04-17 A |  |  | 郭浩隆 [2.5%]; 梁远志 [2.5%]; 沈一聪 [2.5%]; 宋冰晨 [2.5%]; 赵正阳 [2.5%] |
| 91 | 4.2 更新MS Project至6.0 | 5d | 2020-04-17 A | 2020-04-21 A |  |  | 宋冰晨 [5%] |
| 92 | 4.3 检查A、G组的修改情况 | 1d | 2020-04-21 A | 2020-04-21 A | 90 | start no earlier than 2020-04-21 | 赵正阳 [6.2%] |
| 93 | 4.4 检查A、F组的修改情况 | 1d | 2020-04-21 A | 2020-04-21 A | 90 | start no earlier than 2020-04-21 | 沈一聪 [12.5%] |
| 94 | 4.5 检查I、F组的修改情况 | 1d | 2020-04-21 A | 2020-04-21 A | 90 | start no earlier than 2020-04-21 | 梁远志 [12.5%] |
| 95 | 4.6 检查I、G组的修改情况 | 1d | 2020-04-21 A | 2020-04-21 A | 90 | start no earlier than 2020-04-21 | 宋冰晨 [12.5%] |
| 96 | 4.7 检查I、G组的修改情况 | 1d | 2020-04-21 A | 2020-04-21 A | 90 | start no earlier than 2020-04-21 | 郭浩隆 [25%] |
| 97 | 4.8 完成基本网站后端开发 | 4d | 2020-04-18 A | 2020-04-21 A | 90 |  | 赵正阳 [25%] |
| 98 | 4.9 实现针对普通用户的静态页面 | 4d | 2020-04-18 A | 2020-04-21 A | 90 |  | 宋冰晨 [31.2%] |
| 99 | 4.10 完成Top250movie的爬虫 | 4d | 2020-04-18 A | 2020-04-21 A | 90 |  | 沈一聪 [25%] |
| 100 | 4.11 完成调度器基本的节点操作和作业操作 | 4d | 2020-04-18 A | 2020-04-21 A | 90 |  | 梁远志 [12.5%] |
| 101 | 4.12 完成用户登录、注册等静态页面的编写 | 4d | 2020-04-18 A | 2020-04-21 A | 90 |  | 郭浩隆 [21.9%] |
| 102 | 4.13 第12次组会：组员展示目前的开发进展，确定对评审的4个组的排序规则和下一步的开发工作目标 | 1d | 2020-04-22 A | 2020-04-22 A | 97, 98, 99, 100, 101 |  | 郭浩隆 [3.8%]; 梁远志 [3.8%]; 沈一聪 [3.8%]; 宋冰晨 [3.8%]; 赵正阳 [3.8%] |
| 103 | 4.14 协调GitHub上项目分工合并 | 1d | 2020-04-22 A | 2020-04-22 A | 97, 98, 101 |  | 梁远志 [25%] |
| 104 | 4.15 形成工作量统计分析报告v1.1 | 0.5d | 2020-04-23 A | 2020-04-23 A | 102 |  | 赵正阳 [12.5%] |
| 105 | 4.16 与梁远志探讨了项目的数据库结构、参数接口、调度等方面的设计，形成设计文档 | 1d | 2020-04-23 A | 2020-04-23 A | 102 |  | 沈一聪 [25%] |
| 106 | 4.17 完成实验七的PPT | 0.5d | 2020-04-23 A | 2020-04-23 A | 102 |  | 梁远志 [25%] |
| 107 | 4.18 完成实验六的PPT | 0.5d | 2020-04-23 A | 2020-04-23 A | 102 |  | 宋冰晨 [25%] |
| 108 | 4.19 完成实验8和后端开发相关的ppt，整合形成课堂汇报ppt | 0.5d | 2020-04-23 A | 2020-04-23 A | 104, 106, 107 |  | 赵正阳 [25%] |

Changed:

| ID | Task | Other |
| --- | --- | --- |
| 87 | 3.25 整合形成课堂汇报PPT | was named 3.25 整合形成第8周课堂汇报PPT |

## Version 18 (saved 2020-05-03, file 项目进度计划v8.0.mpp)

Note of the change: Merge branch 'master' of github.com:bhsei/20_H

Last finish 2020-04-23 → 2020-05-02 (+9d). Complete tasks 97 → 112.

Added:

| ID | Task | Duration | Start | Finish | Predecessors | Constraint | Resources |
| --- | --- | --- | --- | --- | --- | --- | --- |
| 109 | **第9周** | 7d | 2020-04-24 A | 2020-04-30 A | 89 |  |  |
| 110 | 4.20 第12次组会：明确task和job的状态转移以及组员个人开发任务 | 1d | 2020-04-25 A | 2020-04-25 A |  | start no earlier than 2020-04-25 | 郭浩隆 [5%]; 梁远志 [5%]; 沈一聪 [5%]; 宋冰晨 [5%]; 赵正阳 [5%] |
| 111 | 4.21 更新MS Project至7.0 | 5d | 2020-04-24 A | 2020-04-28 A |  |  | 宋冰晨 [12.5%] |
| 112 | 4.22 完成豆瓣爬虫脚本 | 2d | 2020-04-26 A | 2020-04-27 A | 110 |  | 沈一聪 [37.5%] |
| 113 | 4.23 完成Scheduler的开发和部署工作 | 2d | 2020-04-26 A | 2020-04-27 A | 110 |  | 梁远志 [25%] |
| 114 | 4.24 完成调度器到实际爬虫执行的参数对接和测试 | 1d | 2020-04-28 A | 2020-04-28 A | 112, 113 |  | 梁远志 [18.8%]; 沈一聪 [18.8%] |
| 115 | 4.25 web小组内部组会：重构现有代码，按功能模块拆分为不同app | 1d | 2020-04-29 A | 2020-04-29 A |  | start no earlier than 2020-04-29 | 郭浩隆 [8.3%]; 宋冰晨 [8.3%]; 赵正阳 [8.3%] |
| 116 | 4.26 完成用户登录注册功能的重构、模板相关实体类的重新设计以及读取图片的pic应用 | 1d | 2020-04-30 A | 2020-04-30 A | 115 |  | 赵正阳 |
| 117 | 4.27 完成7个静态页面的修改和url的设计 | 1d | 2020-04-30 A | 2020-04-30 A | 115 |  | 宋冰晨 [87.5%] |
| 118 | 4.28 学习django部分相关内容，将user部分的html文件改成django模板写法，调整user部分路径结构 | 1d | 2020-04-30 A | 2020-04-30 A | 115 |  | 郭浩隆 [43.8%] |
| 119 | 4.29 完成豆瓣电影的example素材 | 1d | 2020-04-30 A | 2020-04-30 A | 115 |  | 沈一聪 [12.5%] |
| 120 | **第10周** | 2d | 2020-05-01 A | 2020-05-02 A | 109 |  |  |
| 121 | 4.30 对接spiderTemplate应用的前后端接口 | 1d | 2020-05-01 A | 2020-05-01 A |  |  | 宋冰晨 [12.5%]; 赵正阳 [12.5%] |
| 122 | 4.31 完成spiderTemplate应用的后端视图（创建任务除外） | 1d | 2020-05-02 A | 2020-05-02 A | 121 |  | 赵正阳 [37.5%] |
| 123 | 4.32 spiderTemplate APP下所有页面完成对接后端 | 1d | 2020-05-02 A | 2020-05-02 A | 121 |  | 宋冰晨 [37.5%] |
| 124 | 4.33 增加节点管理页面和Scheduler需要的接口 | 1d | 2020-05-01 A | 2020-05-01 A |  |  | 梁远志 [37.5%] |
| 125 | 4.34 完成管理员功能（模板查看、模板修改、模板上传）界面的编写 | 1d | 2020-05-01 A | 2020-05-01 A |  |  | 郭浩隆 |

Changed:

| ID | Task | Finish | Duration | Other |
| --- | --- | --- | --- | --- |
| 88 | **4 软件设计与实现** | 2020-04-23 A → 2020-05-02 A (+9d) | 7d → 16d | baseline finish 2020-04-23 → 2020-05-02 |

## Version 19 (saved 2020-05-08, file 项目进度计划v9.0.mpp)

Note of the change: 提交MPP9.0

Last finish 2020-05-02 → 2020-05-07 (+5d). Complete tasks 112 → 135.

Added:

| ID | Task | Duration | Start | Finish | Predecessors | Constraint | Resources |
| --- | --- | --- | --- | --- | --- | --- | --- |
| 126 | 4.35 第13次组会：确定实验3设计文档分工和下周开发任务 | 1d | 2020-05-02 A | 2020-05-02 A |  | start no earlier than 2020-05-02 | 郭浩隆 [6.2%]; 梁远志 [6.2%]; 沈一聪 [6.2%]; 宋冰晨 [6.2%]; 赵正阳 [6.2%] |
| 127 | 4.36 对接task app的任务列表、重命名任务、删除任务、清除数据、下载数据接口 | 1d | 2020-05-03 A | 2020-05-03 A | 126 |  | 宋冰晨 [12.5%]; 赵正阳 [12.5%] |
| 128 | 4.37 实现创建任务、查看任务列表、重命名任务、删除任务、预览数据、下载数据功能 | 2d | 2020-05-04 A | 2020-05-05 A | 127 |  | 赵正阳 [75%] |
| 129 | 4.38 撰写设计文档，绘制ER图并添加文字描述 | 3d | 2020-05-03 A | 2020-05-05 A | 126 |  | 赵正阳 [4.2%] |
| 130 | 4.39 更新MS Project文档至8.0 | 5d | 2020-05-01 A | 2020-05-05 A |  |  | 宋冰晨 [2.5%] |
| 131 | 4.40 将channels添加进Task应用、更新配置文件 | 3d | 2020-05-03 A | 2020-05-05 A | 126 |  | 宋冰晨 [6.2%] |
| 132 | 4.41 完成普通用户web ui部分设计文档 | 3d | 2020-05-03 A | 2020-05-05 A | 126 |  | 宋冰晨 [14.6%] |
| 133 | 4.42 完成豆瓣音乐、读书的爬虫 | 2d | 2020-05-03 A | 2020-05-04 A | 126 |  | 沈一聪 [25%] |
| 134 | 4.43 绘制了爬虫模板开发流程图、阐述了开发进度和内容、展示了爬虫结果 | 3d | 2020-05-03 A | 2020-05-05 A | 126 |  | 沈一聪 [8.3%] |
| 135 | 4.44 完成爬虫模板的线上测试 | 1d | 2020-05-05 A | 2020-05-05 A | 133 |  | 梁远志 [6.2%]; 沈一聪 [6.2%] |
| 136 | 4.45 完善Scheduler的开发工作 | 1d | 2020-05-03 A | 2020-05-03 A | 126 |  | 梁远志 [12.5%] |
| 137 | 4.46 完成Scheduler和Django的联合调试 | 2d | 2020-05-06 A | 2020-05-07 A | 128 |  | 梁远志 [6.2%]; 赵正阳 [6.2%] |
| 138 | 4.47 增加Django项目的自动测试 | 3d | 2020-05-03 A | 2020-05-05 A | 126 |  | 梁远志 [12.5%] |
| 139 | 4.48 在部署服务器上部署Channels所需的环境 | 3d | 2020-05-03 A | 2020-05-05 A | 126 |  | 梁远志 [2.1%] |
| 140 | 4.49 完成调度器的设计文档 | 3d | 2020-05-03 A | 2020-05-05 A | 126 |  | 梁远志 [12.5%] |
| 141 | 4.50 修改管理员功能界面，修改个人信息页面 | 3d | 2020-05-03 A | 2020-05-05 A | 126 |  | 郭浩隆 [14.6%] |
| 142 | 4.51 完成负责部分的设计文档以及两个模块的流程图 | 3d | 2020-05-03 A | 2020-05-05 A | 126 |  | 郭浩隆 [4.2%] |
| 143 | 4.52 第14次组会：整合文档，确定ppt汇报分工 | 1d | 2020-05-06 A | 2020-05-06 A | 129, 132, 134, 140, 142 |  | 郭浩隆 [2.5%]; 梁远志 [2.5%]; 沈一聪 [2.5%]; 宋冰晨 [2.5%]; 赵正阳 [2.5%] |
| 144 | 4.53 制作实验六燃尽图以及实验三相关PPT | 0.5d | 2020-05-07 A | 2020-05-07 A | 143 |  | 宋冰晨 [25%] |
| 145 | 4.54 制作了爬虫模板展示用的幻灯片 | 0.5d | 2020-05-07 A | 2020-05-07 A | 143 |  | 沈一聪 [25%] |
| 146 | 4.55 制作了调度器部分展示用的幻灯片 | 0.5d | 2020-05-07 A | 2020-05-07 A | 143 |  | 梁远志 [25%] |
| 147 | 4.56 完成管理员等web ui部分的ppt的制作 | 0.5d | 2020-05-07 A | 2020-05-07 A | 143 |  | 郭浩隆 [25%] |
| 148 | 4.57 形成工作量统计分析报告v1.2及本周汇报ppt | 0.5d | 2020-05-07 A | 2020-05-07 A | 144, 145, 146, 147 |  | 赵正阳 [37.5%] |

Changed:

| ID | Task | Finish | Duration | Other |
| --- | --- | --- | --- | --- |
| 88 | **4 软件设计与实现** | 2020-05-02 A → 2020-05-07 A (+5d) | 16d → 21d | baseline finish 2020-05-02 → 2020-05-07 |
| 120 | **第10周** | 2020-05-02 A → 2020-05-07 A (+5d) | 2d → 7d | baseline finish 2020-05-02 → 2020-05-07 |

## Version 20 (saved 2020-05-16, file 项目进度计划v9.1.mpp)

Note of the change: 提交MPP10.0

Last finish stays 2020-05-07.

Changed:

| ID | Task | Other |
| --- | --- | --- |
| 110 | 4.20 第13次组会：明确task和job的状态转移以及组员个人开发任务 | was named 4.20 第12次组会：明确task和job的状态转移以及组员个人开发任务 |
| 126 | 4.35 第14次组会：确定实验3设计文档分工和下周开发任务 | was named 4.35 第13次组会：确定实验3设计文档分工和下周开发任务 |
| 143 | 4.52 第15次组会：整合文档，确定ppt汇报分工 | was named 4.52 第14次组会：整合文档，确定ppt汇报分工 |

## Version 21 (saved 2020-05-16, file 项目进度计划v8.1.mpp)

Note of the change: 提交MPP10.0

Last finish 2020-05-07 → 2020-05-02 (-5d). Complete tasks 135 → 112.

Removed: 126 4.35 第14次组会：确定实验3设计文档分工和下周开发任务; 127 4.36 对接task app的任务列表、重命名任务、删除任务、清除数据、下载数据接口; 128 4.37 实现创建任务、查看任务列表、重命名任务、删除任务、预览数据、下载数据功能; 129 4.38 撰写设计文档，绘制ER图并添加文字描述; 130 4.39 更新MS Project文档至8.0; 131 4.40 将channels添加进Task应用、更新配置文件; 132 4.41 完成普通用户web ui部分设计文档; 133 4.42 完成豆瓣音乐、读书的爬虫; 134 4.43 绘制了爬虫模板开发流程图、阐述了开发进度和内容、展示了爬虫结果; 135 4.44 完成爬虫模板的线上测试; 136 4.45 完善Scheduler的开发工作; 137 4.46 完成Scheduler和Django的联合调试; 138 4.47 增加Django项目的自动测试; 139 4.48 在部署服务器上部署Channels所需的环境; 140 4.49 完成调度器的设计文档; 141 4.50 修改管理员功能界面，修改个人信息页面; 142 4.51 完成负责部分的设计文档以及两个模块的流程图; 143 4.52 第15次组会：整合文档，确定ppt汇报分工; 144 4.53 制作实验六燃尽图以及实验三相关PPT; 145 4.54 制作了爬虫模板展示用的幻灯片; 146 4.55 制作了调度器部分展示用的幻灯片; 147 4.56 完成管理员等web ui部分的ppt的制作; 148 4.57 形成工作量统计分析报告v1.2及本周汇报ppt

Changed:

| ID | Task | Finish | Duration | Other |
| --- | --- | --- | --- | --- |
| 88 | **4 软件设计与实现** | 2020-05-07 A → 2020-05-02 A (-5d) | 21d → 16d | baseline finish 2020-05-07 → 2020-05-02 |
| 120 | **第10周** | 2020-05-07 A → 2020-05-02 A (-5d) | 7d → 2d | baseline finish 2020-05-07 → 2020-05-02 |

## Version 22 (saved 2020-05-16, file 项目进度计划v10.0.mpp)

Note of the change: 调整覆盖表格式

Last finish 2020-05-02 → 2020-05-21 (+19d). Complete tasks 112 → 169.

Added:

| ID | Task | Duration | Start | Finish | Predecessors | Constraint | Resources |
| --- | --- | --- | --- | --- | --- | --- | --- |
| 126 | 4.35 第14次组会：确定实验3设计文档分工和下周开发任务 | 1d | 2020-05-02 A | 2020-05-02 A |  | start no earlier than 2020-05-02 | 郭浩隆 [6.2%]; 梁远志 [6.2%]; 沈一聪 [6.2%]; 宋冰晨 [6.2%]; 赵正阳 [6.2%] |
| 127 | 4.36 对接task app的任务列表、重命名任务、删除任务、清除数据、下载数据接口 | 1d | 2020-05-03 A | 2020-05-03 A | 126 |  | 宋冰晨 [12.5%]; 赵正阳 [12.5%] |
| 128 | 4.37 实现创建任务、查看任务列表、重命名任务、删除任务、预览数据、下载数据功能 | 2d | 2020-05-04 A | 2020-05-05 A | 127 |  | 赵正阳 [75%] |
| 129 | 4.38 撰写设计文档，绘制ER图并添加文字描述 | 3d | 2020-05-03 A | 2020-05-05 A | 126 |  | 赵正阳 [4.2%] |
| 130 | 4.39 更新MS Project文档至8.0 | 5d | 2020-05-01 A | 2020-05-05 A |  |  | 宋冰晨 [2.5%] |
| 131 | 4.40 将channels添加进Task应用、更新配置文件 | 3d | 2020-05-03 A | 2020-05-05 A | 126 |  | 宋冰晨 [6.2%] |
| 132 | 4.41 完成普通用户web ui部分设计文档 | 3d | 2020-05-03 A | 2020-05-05 A | 126 |  | 宋冰晨 [14.6%] |
| 133 | 4.42 完成豆瓣音乐、读书的爬虫 | 2d | 2020-05-03 A | 2020-05-04 A | 126 |  | 沈一聪 [25%] |
| 134 | 4.43 绘制了爬虫模板开发流程图、阐述了开发进度和内容、展示了爬虫结果 | 3d | 2020-05-03 A | 2020-05-05 A | 126 |  | 沈一聪 [8.3%] |
| 135 | 4.44 完成爬虫模板的线上测试 | 1d | 2020-05-05 A | 2020-05-05 A | 133 |  | 梁远志 [6.2%]; 沈一聪 [6.2%] |
| 136 | 4.45 完善Scheduler的开发工作 | 1d | 2020-05-03 A | 2020-05-03 A | 126 |  | 梁远志 [12.5%] |
| 137 | 4.46 完成Scheduler和Django的联合调试 | 2d | 2020-05-06 A | 2020-05-07 A | 128 |  | 梁远志 [6.2%]; 赵正阳 [6.2%] |
| 138 | 4.47 增加Django项目的自动测试 | 3d | 2020-05-03 A | 2020-05-05 A | 126 |  | 梁远志 [12.5%] |
| 139 | 4.48 在部署服务器上部署Channels所需的环境 | 3d | 2020-05-03 A | 2020-05-05 A | 126 |  | 梁远志 [2.1%] |
| 140 | 4.49 完成调度器的设计文档 | 3d | 2020-05-03 A | 2020-05-05 A | 126 |  | 梁远志 [12.5%] |
| 141 | 4.50 修改管理员功能界面，修改个人信息页面 | 3d | 2020-05-03 A | 2020-05-05 A | 126 |  | 郭浩隆 [14.6%] |
| 142 | 4.51 完成负责部分的设计文档以及两个模块的流程图 | 3d | 2020-05-03 A | 2020-05-05 A | 126 |  | 郭浩隆 [4.2%] |
| 143 | 4.52 第15次组会：整合文档，确定ppt汇报分工 | 1d | 2020-05-06 A | 2020-05-06 A | 129, 132, 134, 140, 142 |  | 郭浩隆 [2.5%]; 梁远志 [2.5%]; 沈一聪 [2.5%]; 宋冰晨 [2.5%]; 赵正阳 [2.5%] |
| 144 | 4.53 制作实验六燃尽图以及实验三相关PPT | 0.5d | 2020-05-07 A | 2020-05-07 A | 143 |  | 宋冰晨 [25%] |
| 145 | 4.54 制作了爬虫模板展示用的幻灯片 | 0.5d | 2020-05-07 A | 2020-05-07 A | 143 |  | 沈一聪 [25%] |
| 146 | 4.55 制作了调度器部分展示用的幻灯片 | 0.5d | 2020-05-07 A | 2020-05-07 A | 143 |  | 梁远志 [25%] |
| 147 | 4.56 完成管理员等web ui部分的ppt的制作 | 0.5d | 2020-05-07 A | 2020-05-07 A | 143 |  | 郭浩隆 [25%] |
| 148 | 4.57 形成工作量统计分析报告v1.2及本周汇报ppt | 0.5d | 2020-05-07 A | 2020-05-07 A | 144, 145, 146, 147 |  | 赵正阳 [37.5%] |
| 149 | **5 软件测试需求分析** | 7d | 2020-05-08 A | 2020-05-14 A |  |  |  |
| 150 | **第11周** | 7d | 2020-05-08 A | 2020-05-14 A | 120 |  |  |
| 151 | 5.1 第16次组会：确定测试需求分析实验的初步分工 | 1d | 2020-05-08 A | 2020-05-08 A |  |  | 郭浩隆 [5%]; 梁远志 [5%]; 沈一聪 [5%]; 宋冰晨 [5%]; 赵正阳 [5%] |
| 152 | 5.2 实现用户修改个人信息、修改密码、创建模板功能 | 3d | 2020-05-09 A | 2020-05-11 A | 151 |  | 赵正阳 [20.8%] |
| 153 | 5.3 更新MPP至9.0 | 3d | 2020-05-08 A | 2020-05-10 A |  |  | 宋冰晨 [8.3%] |
| 154 | 5.4 为templateSetting页面的表单增加前端检查、实现修改任务名、批量删除任务、暂停/终止/重启/继续的前端效果 | 2d | 2020-05-09 A | 2020-05-10 A | 151 |  | 宋冰晨 [37.5%] |
| 155 | 5.5 实现使用channels推送消息后的前端效果 | 2d | 2020-05-09 A | 2020-05-10 A | 151 |  | 宋冰晨 [12.5%] |
| 156 | 5.6 实现数据预览、清空数据、下载csv/xlxs/json数据的前端效果 | 2d | 2020-05-09 A | 2020-05-10 A | 151 |  | 宋冰晨 [18.8%] |
| 157 | 5.7 实现最近编辑的相关设计和前端实现 | 2d | 2020-05-09 A | 2020-05-10 A | 151 |  | 宋冰晨 [18.8%] |
| 158 | 5.8 对接Task应用的前后端接口 | 0.2d | 2020-05-11 A | 2020-05-11 A | 154, 155, 156, 157 |  | 宋冰晨 [46.9%]; 赵正阳 [46.9%] |
| 159 | 5.9 完成创建模板等的前端开发任务 | 3d | 2020-05-09 A | 2020-05-11 A | 151 |  | 郭浩隆 [35.4%] |
| 160 | 5.10 对接创建模板的接口 | 1d | 2020-05-12 A | 2020-05-12 A | 152, 159 |  | 郭浩隆 [3.1%]; 赵正阳 [3.1%] |
| 161 | 5.11 实现重新运行任务、更新任务状态时向前端推送消息功能 | 0.8d | 2020-05-11 A | 2020-05-11 A | 158 |  | 赵正阳 [62.5%] |
| 162 | 5.12 列出测试用例和需求用例的对照表、整理测试规格文档的格式及补充术语 | 2d | 2020-05-09 A | 2020-05-10 A | 151 |  | 梁远志 [18.8%] |
| 163 | 5.13 解决在服务器部署的Websocket的Bug | 1d | 2020-05-12 A | 2020-05-12 A | 161 |  | 梁远志 [12.5%] |
| 164 | 5.14 调研软件测试，给出测试用例表、覆盖表、测试方法、工具等 | 2d | 2020-05-09 A | 2020-05-10 A | 151 |  | 沈一聪 [37.5%] |
| 165 | 5.15 第17次组会：确定覆盖表和PPT分工 | 1d | 2020-05-11 A | 2020-05-11 A | 164, 162 |  | 郭浩隆 [3.8%]; 梁远志 [3.8%]; 沈一聪 [3.8%]; 宋冰晨 [3.8%]; 赵正阳 [3.8%] |
| 166 | 5.16 完成web ui部分测试用例和覆盖表的编写 | 3d | 2020-05-12 A | 2020-05-14 A | 165 |  | 宋冰晨 [12.5%] |
| 167 | 5.17 针对管理员完成测试需求规格说明书和测试覆盖表的填写 | 3d | 2020-05-12 A | 2020-05-14 A | 165 |  | 郭浩隆 [10.4%] |
| 168 | 5.18 撰写管理员管理节点的测试用例，完成管理节点的测试用例的测试，形成覆盖表 | 3d | 2020-05-12 A | 2020-05-14 A | 165 |  | 梁远志 [16.7%] |
| 169 | 5.19 完成修改和删除模板功能、修复bug | 1d | 2020-05-12 A | 2020-05-12 A | 165 |  | 赵正阳 [50%] |
| 170 | 5.20 完成NFT测试用例表格的设计 | 1d | 2020-05-12 A | 2020-05-12 A | 165 |  | 沈一聪 [25%] |
| 171 | 5.21 完成Easyspider的非功能需求测试和性能测试工作 | 2d | 2020-05-13 A | 2020-05-14 A | 170 |  | 沈一聪 [31.2%] |
| 172 | 5.22 完成FT06~FT10五个测试用例的测试，填写覆盖表 | 3d | 2020-05-12 A | 2020-05-14 A | 165 |  | 赵正阳 [8.3%] |
| 173 | 5.23 第18次组会：测试网站运行情况，确定测试工作和ppt分工 | 1d | 2020-05-13 A | 2020-05-13 A | 163, 160, 169 |  | 郭浩隆 [5%]; 梁远志 [5%]; 沈一聪 [5%]; 宋冰晨 [5%]; 赵正阳 [5%] |
| 174 | 5.24 完成websocket、html转义、restart未更新最近编辑时间、datatable显示等BUG的修复，增加loading效果和前端阻止用户对同个任务同时进行多个操作 | 1d | 2020-05-14 A | 2020-05-14 A | 173 |  | 宋冰晨 [43.8%] |
| 175 | 5.25 完成scrapy爬虫模板的代理池功能 | 1d | 2020-05-14 A | 2020-05-14 A | 173 |  | 沈一聪 [37.5%] |
| 176 | 5.26 完成测试需求文档其余部分的编写和整合 | 1d | 2020-05-14 A | 2020-05-14 A | 173 |  | 沈一聪 [25%] |
| 177 | 5.27 优化在测试中发现调度器效率问题 | 1d | 2020-05-14 A | 2020-05-14 A | 173 |  | 梁远志 [12.5%] |
| 178 | **6 软件测试评审** | 7d | 2020-05-15 A | 2020-05-21 A |  |  |  |
| 179 | **第12周** | 7d | 2020-05-15 A | 2020-05-21 A | 150 |  |  |
| 180 | 6.1 完成普通用户web ui部分测试用例PPT | 0.5d | 2020-05-15 A | 2020-05-15 A |  |  | 宋冰晨 [25%] |
| 181 | 6.2 完成非功能需求测试机性能测试部分PPT | 0.5d | 2020-05-15 A | 2020-05-15 A |  |  | 沈一聪 |
| 182 | 6.3 完成部署部分和管理节点相关测试的幻灯片 | 0.5d | 2020-05-15 A | 2020-05-15 A |  |  | 梁远志 [50%] |
| 183 | 6.4 完成管理员等web ui部分的ppt的制作 | 0.5d | 2020-05-15 A | 2020-05-15 A |  |  | 郭浩隆 [25%] |
| 184 | 6.5 制作整合形成课堂汇报PPT | 0.5d | 2020-05-15 A | 2020-05-15 A | 180, 181, 182, 183 |  | 赵正阳 [12.5%] |
| 185 | 6.6 第19次组会：确定测试需求文档补充工作、评审工作的分工和DDL | 1d | 2020-05-15 A | 2020-05-15 A |  |  | 郭浩隆 [5%]; 梁远志 [5%]; 沈一聪 [5%]; 宋冰晨 [5%]; 赵正阳 [5%] |
| 186 | 6.7 更新MPP至10.0 | 7d | 2020-05-15 A | 2020-05-21 A |  |  | 宋冰晨 [5.4%] |

Changed:

| ID | Task | Finish | Duration | Other |
| --- | --- | --- | --- | --- |
| 88 | **4 软件设计与实现** | 2020-05-02 A → 2020-05-07 A (+5d) | 16d → 21d | baseline finish 2020-05-02 → 2020-05-07 |
| 120 | **第10周** | 2020-05-02 A → 2020-05-07 A (+5d) | 2d → 7d | baseline finish 2020-05-02 → 2020-05-07 |

## Version 23 (saved 2020-05-22, file 项目进度计划v11.0.mpp)

Note of the change: 提交宋冰晨第13周工作日志；提交MPP11.0

Last finish 2020-05-21 → 2020-05-22 (+1d). Complete tasks 169 → 198.

Added:

| ID | Task | Duration | Start | Finish | Predecessors | Constraint | Resources |
| --- | --- | --- | --- | --- | --- | --- | --- |
| 187 | 6.8 第20次小组会：确定测试需求文档补充工作、评审工作的分工和DDL | 1d | 2020-05-15 A | 2020-05-15 A |  |  | 郭浩隆 [5%]; 梁远志 [5%]; 沈一聪 [5%]; 宋冰晨 [5%]; 赵正阳 [5%] |
| 188 | 6.9 形成场景测试文档和对应的覆盖表 | 1d | 2020-05-16 A | 2020-05-16 A | 187 |  | 宋冰晨 [37.5%] |
| 189 | 6.10 形成可用性测试结果文档 | 3d | 2020-05-16 A | 2020-05-18 A | 187 |  | 宋冰晨 [8.3%] |
| 190 | 6.11 形成测试计划文档 | 2d | 2020-05-16 A | 2020-05-17 A | 187 |  | 宋冰晨 [18.8%] |
| 191 | 6.12 解决浏览器窗口搜小时布局混乱问题 | 4d | 2020-05-16 A | 2020-05-19 A | 187 |  | 宋冰晨 [1.6%] |
| 192 | 6.13 新增scrapy单元测试、集成测试、功能测试和Easyspider性能测试方案 | 2d | 2020-05-16 A | 2020-05-17 A | 187 |  | 沈一聪 [12.5%] |
| 193 | 6.14 完成Easyspider-site-douban的单元测试、集成测试和功能测试 | 1d | 2020-05-18 A | 2020-05-18 A | 192 |  | 沈一聪 [75%] |
| 194 | 6.15 形成H-EasySpider-性能测试报告v1.0 | 1d | 2020-05-19 A | 2020-05-19 A | 193 |  | 沈一聪 [37.5%] |
| 195 | 6.16 补充完善软件测试计划 | 1d | 2020-05-18 A | 2020-05-18 A | 190 |  | 沈一聪 [12.5%] |
| 196 | 6.17 修正修改模板页面bug，修改上传页面部分bug | 2d | 2020-05-16 A | 2020-05-17 A | 187 |  | 郭浩隆 [12.5%] |
| 197 | 6.18 制作软件问题表、测试规格说明书评审表和测试规格说明书检查单 | 3d | 2020-05-16 A | 2020-05-18 A | 187 |  | 郭浩隆 [6.2%] |
| 198 | 6.19 新增调度器单元测试、调度器/Django后端集成测试 | 1d | 2020-05-16 A | 2020-05-16 A | 187 |  | 梁远志 [62.5%] |
| 199 | 6.20 撰写测试规格说明的新增文档 | 1d | 2020-05-17 A | 2020-05-17 A | 198 |  | 梁远志 [25%] |
| 200 | 6.21 整理撰写测试结果及问题报告 | 1d | 2020-05-20 A | 2020-05-20 A | 188, 189, 193, 194 |  | 梁远志 [50%] |
| 201 | 6.22 形成H-EasySpider-测试需求规格说明书v1.1 | 1d | 2020-05-18 A | 2020-05-18 A | 188, 192, 199 |  | 赵正阳 [37.5%] |
| 202 | 6.23 形成H-EasySpider-工作量统计分析报告v1.3 | 4d | 2020-05-15 A | 2020-05-18 A |  |  | 赵正阳 [1.6%] |
| 203 | 6.24 完成对E组评审并生成7条评审意见和5条软件问题报告 | 1d | 2020-05-20 A | 2020-05-20 A |  | start no earlier than 2020-05-20 | 郭浩隆 [43.8%] |
| 204 | 6.25 形成对E组的8条评审意见 | 1d | 2020-05-20 A | 2020-05-20 A |  | start no earlier than 2020-05-20 | 赵正阳 [25%] |
| 205 | 6.26 形成对D组的13条测试需求文档的评审意见、8个软件问题、10条测试结果的评审意见 | 1d | 2020-05-20 A | 2020-05-20 A |  | start no earlier than 2020-05-20 | 宋冰晨 [25%] |
| 206 | 6.27 形成对D组的4条评审意见和5个软件问题汇报 | 1d | 2020-05-20 A | 2020-05-20 A |  | start no earlier than 2020-05-20 | 沈一聪 [25%] |
| 207 | 6.28 对D组形成10条评审意见和2个软件问题汇报 | 1d | 2020-05-20 A | 2020-05-20 A |  | start no earlier than 2020-05-20 | 梁远志 [25%] |
| 208 | 6.29 形成对D、E组的评审汇总和软件问题汇总 | 1d | 2020-05-21 A | 2020-05-21 A | 203, 204, 205, 206, 207 |  | 郭浩隆 [18.8%] |
| 209 | 6.30 将B组和C组的评审意见整理为反馈表并将问题分配到每个组员 | 0.3d | 2020-05-21 A | 2020-05-21 A |  | start no earlier than 2020-05-21 | 赵正阳 [83.3%] |
| 210 | 6.31 第21次小组会：确定评审组提出的BUG的修改方案和PPT分工 | 0.2d | 2020-05-21 A | 2020-05-21 A | 209 | start no earlier than 2020-05-21 | 郭浩隆 [12.5%]; 梁远志 [12.5%]; 沈一聪 [12.5%]; 宋冰晨 [12.5%]; 赵正阳 [12.5%] |
| 211 | 6.32 修改负责的评审问题和软件问题 | 0.2d | 2020-05-21 A | 2020-05-21 A | 210 |  | 郭浩隆 [62.5%]; 梁远志 [62.5%]; 沈一聪 [62.5%]; 宋冰晨 [62.5%]; 赵正阳 [62.5%] |
| 212 | 6.33 制作PPT | 0.2d | 2020-05-21 A | 2020-05-21 A | 211 |  | 梁远志 [62.5%] |
| 213 | **第13周** | 1d | 2020-05-22 A | 2020-05-22 A | 179 |  |  |
| 214 | 6.34 制作汇报PPT | 0.5d | 2020-05-22 A | 2020-05-22 A |  |  | 沈一聪 [25%] |
| 215 | 6.35 完成测试计划、场景测试、github issuse、评审反馈部分PPT | 0.5d | 2020-05-22 A | 2020-05-22 A |  |  | 宋冰晨 [50%] |
| 216 | 6.36 制作汇报PPT及完成PPT汇总 | 0.5d | 2020-05-22 A | 2020-05-22 A | 214, 215 |  | 赵正阳 [25%] |

Changed:

| ID | Task | Finish | Duration | Other |
| --- | --- | --- | --- | --- |
| 178 | **6 软件测试评审** | 2020-05-21 A → 2020-05-22 A (+1d) | 7d → 8d | baseline finish 2020-05-21 → 2020-05-22 |

## Version 24 (saved 2020-05-29, file 项目进度计划v12.0.mpp)

Note of the change: 提交MPP12.0

Last finish 2020-05-22 → 2020-06-05 (+14d). Complete tasks 198 → 220.

Added:

| ID | Task | Duration | Start | Finish | Predecessors | Constraint | Resources |
| --- | --- | --- | --- | --- | --- | --- | --- |
| 217 | 6.37 评审C组测试文档，形成6个文档评审意见、5个软件问题 | 1d | 2020-05-27 A | 2020-05-27 A |  | start no earlier than 2020-05-27 | 赵正阳 [37.5%] |
| 218 | 6.38 更新MS Project至11.0 | 1d | 2020-05-22 A | 2020-05-22 A |  |  | 宋冰晨 [12.5%] |
| 219 | 6.39 评审C组测试文档，形成26条评审意见和14个软件问题 | 1d | 2020-05-27 A | 2020-05-27 A |  | start no earlier than 2020-05-27 | 宋冰晨 [25%] |
| 220 | 6.40 评审C组测试文档，形成10条评审意见和4个软件问题 | 1d | 2020-05-27 A | 2020-05-27 A |  | start no earlier than 2020-05-27 | 郭浩隆 [43.8%] |
| 221 | 6.41 完成对B组的测试评审，形成12条评审意见 | 1d | 2020-05-27 A | 2020-05-27 A |  | start no earlier than 2020-05-27 | 沈一聪 [25%] |
| 222 | 6.42 对B组进行测试评审，提出4个文档问题及3个软件问题 | 1d | 2020-05-27 A | 2020-05-27 A |  | start no earlier than 2020-05-27 | 梁远志 [25%] |
| 223 | 6.43 整合对B、C组的评审意见，形成H对B、C两组的文档评审意见汇总和软件问题汇总 | 1d | 2020-05-28 A | 2020-05-28 A | 217, 219, 220, 221, 222 | start no earlier than 2020-05-27 | 郭浩隆 [18.8%] |
| 224 | 6.44 根据D组的意见，形成H-EasySpider-测试需求规格说明书v1.3.1 | 0.16d | 2020-05-28 A | 2020-05-28 A |  | start no earlier than 2020-05-28 | 赵正阳 [78.1%] |
| 225 | 6.45 根据D组的意见，形成H-EasySpider-测试需求规格说明书v1.3.2 | 0.16d | 2020-05-28 A | 2020-05-28 A | 224 | start no earlier than 2020-05-28 | 宋冰晨 [39.1%] |
| 226 | 6.46 根据D组的意见，形成H-EasySpider-测试需求规格说明书v1.3.3 | 0.16d | 2020-05-28 A | 2020-05-28 A | 225 |  | 郭浩隆 [39.1%] |
| 227 | 6.47 根据D组的意见，形成H-EasySpider-测试需求规格说明书v1.3.4；根据E组的意见，结果分析报告v1.3 | 0.16d | 2020-05-28 A | 2020-05-28 A | 226 |  | 梁远志 [78.1%] |
| 228 | 6.48 根据E组的意见，形成H-EasySpider-测试需求规格说明书v1.3.5 | 0.16d | 2020-05-28 A | 2020-05-28 A | 227 |  | 赵正阳 [78.1%] |
| 229 | 6.49 根据E组的意见，形成H-EasySpider-测试需求规格说明书v1.3.6 | 0.2d | 2020-05-28 A | 2020-05-28 A | 228 |  | 宋冰晨 [31.2%] |
| 230 | 6.50 根据D、E组的意见形成性能测试报告v2.0 | 1d | 2020-05-28 A | 2020-05-28 A |  | start no earlier than 2020-05-28 | 沈一聪 [6.2%] |
| 231 | 6.51 和C组沟通，达成一致 | 1d | 2020-05-28 A | 2020-05-28 A |  | start no earlier than 2020-05-28 | 宋冰晨 [25%] |
| 232 | **第14周** | 2d | 2020-05-29 A | 2020-05-30 A | 213 |  |  |
| 233 | 6.52 与B组沟通评审意见，达成一致 | 0.5d | 2020-05-29 A | 2020-05-29 A |  |  | 沈一聪 [50%] |
| 234 | 6.53 与B组沟通评审意见，达到一致 | 0.5d | 2020-05-29 A | 2020-05-29 A |  |  | 梁远志 [25%] |
| 235 | 6.54 形成H-EasySpider-工作量统计分析报告v1.4 | 1d | 2020-05-29 A | 2020-05-29 A |  |  | 赵正阳 [12.5%] |
| 236 | 6.55 修复D组和E组报告的各1个缺陷 | 2d | 2020-05-29 A | 2020-05-30 A |  |  | 宋冰晨 [25%] |
| 237 | 6.56 制作汇报ppt及汇总 | 0.5d | 2020-05-29 A | 2020-05-29 A | 223, 227, 229, 230, 231, 233, 234 |  | 赵正阳 [25%] |
| 238 | 6.57 更新MS Project至12.0 | 1d | 2020-05-29 A | 2020-05-29 A |  |  | 宋冰晨 [25%] |
| 239 | 项目结束 | 0d | 2020-06-05 A | 2020-06-05 A |  | start no earlier than 2020-06-05 |  |

Changed:

| ID | Task | Finish | Duration | Other |
| --- | --- | --- | --- | --- |
| 178 | **6 软件测试评审** | 2020-05-22 A → 2020-05-30 A (+8d) | 8d → 16d | baseline finish 2020-05-22 → 2020-05-30 |
| 213 | **第13周** | 2020-05-22 A → 2020-05-28 A (+6d) | 1d → 7d | baseline finish 2020-05-22 → 2020-05-28 |

## Version 25 (saved 2020-06-01, file 项目进度计划v9.1.mpp)

Note of the change: 提交进度报告

Last finish 2020-06-05 → 2020-05-07 (-29d). Complete tasks 220 → 135.

Removed: 149 5 软件测试需求分析; 150 第11周; 151 5.1 第16次组会：确定测试需求分析实验的初步分工; 152 5.2 实现用户修改个人信息、修改密码、创建模板功能; 153 5.3 更新MPP至9.0; 154 5.4 为templateSetting页面的表单增加前端检查、实现修改任务名、批量删除任务、暂停/终止/重启/继续的前端效果; 155 5.5 实现使用channels推送消息后的前端效果; 156 5.6 实现数据预览、清空数据、下载csv/xlxs/json数据的前端效果; 157 5.7 实现最近编辑的相关设计和前端实现; 158 5.8 对接Task应用的前后端接口; 159 5.9 完成创建模板等的前端开发任务; 160 5.10 对接创建模板的接口; 161 5.11 实现重新运行任务、更新任务状态时向前端推送消息功能; 162 5.12 列出测试用例和需求用例的对照表、整理测试规格文档的格式及补充术语; 163 5.13 解决在服务器部署的Websocket的Bug; 164 5.14 调研软件测试，给出测试用例表、覆盖表、测试方法、工具等; 165 5.15 第17次组会：确定覆盖表和PPT分工; 166 5.16 完成web ui部分测试用例和覆盖表的编写; 167 5.17 针对管理员完成测试需求规格说明书和测试覆盖表的填写; 168 5.18 撰写管理员管理节点的测试用例，完成管理节点的测试用例的测试，形成覆盖表; 169 5.19 完成修改和删除模板功能、修复bug; 170 5.20 完成NFT测试用例表格的设计; 171 5.21 完成Easyspider的非功能需求测试和性能测试工作; 172 5.22 完成FT06~FT10五个测试用例的测试，填写覆盖表; 173 5.23 第18次组会：测试网站运行情况，确定测试工作和ppt分工; 174 5.24 完成websocket、html转义、restart未更新最近编辑时间、datatable显示等BUG的修复，增加loading效果和前端阻止用户对同个任务同时进行多个操作; 175 5.25 完成scrapy爬虫模板的代理池功能; 176 5.26 完成测试需求文档其余部分的编写和整合; 177 5.27 优化在测试中发现调度器效率问题; 178 6 软件测试评审; 179 第12周; 180 6.1 完成普通用户web ui部分测试用例PPT; 181 6.2 完成非功能需求测试机性能测试部分PPT; 182 6.3 完成部署部分和管理节点相关测试的幻灯片; 183 6.4 完成管理员等web ui部分的ppt的制作; 184 6.5 制作整合形成课堂汇报PPT; 185 6.6 第19次组会：确定测试需求文档补充工作、评审工作的分工和DDL; 186 6.7 更新MPP至10.0; 187 6.8 第20次小组会：确定测试需求文档补充工作、评审工作的分工和DDL; 188 6.9 形成场景测试文档和对应的覆盖表; 189 6.10 形成可用性测试结果文档; 190 6.11 形成测试计划文档; 191 6.12 解决浏览器窗口搜小时布局混乱问题; 192 6.13 新增scrapy单元测试、集成测试、功能测试和Easyspider性能测试方案; 193 6.14 完成Easyspider-site-douban的单元测试、集成测试和功能测试; 194 6.15 形成H-EasySpider-性能测试报告v1.0; 195 6.16 补充完善软件测试计划; 196 6.17 修正修改模板页面bug，修改上传页面部分bug; 197 6.18 制作软件问题表、测试规格说明书评审表和测试规格说明书检查单; 198 6.19 新增调度器单元测试、调度器/Django后端集成测试; 199 6.20 撰写测试规格说明的新增文档; 200 6.21 整理撰写测试结果及问题报告; 201 6.22 形成H-EasySpider-测试需求规格说明书v1.1; 202 6.23 形成H-EasySpider-工作量统计分析报告v1.3; 203 6.24 完成对E组评审并生成7条评审意见和5条软件问题报告; 204 6.25 形成对E组的8条评审意见; 205 6.26 形成对D组的13条测试需求文档的评审意见、8个软件问题、10条测试结果的评审意见; 206 6.27 形成对D组的4条评审意见和5个软件问题汇报; 207 6.28 对D组形成10条评审意见和2个软件问题汇报; 208 6.29 形成对D、E组的评审汇总和软件问题汇总; 209 6.30 将B组和C组的评审意见整理为反馈表并将问题分配到每个组员; 210 6.31 第21次小组会：确定评审组提出的BUG的修改方案和PPT分工; 211 6.32 修改负责的评审问题和软件问题; 212 6.33 制作PPT; 213 第13周; 214 6.34 制作汇报PPT; 215 6.35 完成测试计划、场景测试、github issuse、评审反馈部分PPT; 216 6.36 制作汇报PPT及完成PPT汇总; 217 6.37 评审C组测试文档，形成6个文档评审意见、5个软件问题; 218 6.38 更新MS Project至11.0; 219 6.39 评审C组测试文档，形成26条评审意见和14个软件问题; 220 6.40 评审C组测试文档，形成10条评审意见和4个软件问题; 221 6.41 完成对B组的测试评审，形成12条评审意见; 222 6.42 对B组进行测试评审，提出4个文档问题及3个软件问题; 223 6.43 整合对B、C组的评审意见，形成H对B、C两组的文档评审意见汇总和软件问题汇总; 224 6.44 根据D组的意见，形成H-EasySpider-测试需求规格说明书v1.3.1; 225 6.45 根据D组的意见，形成H-EasySpider-测试需求规格说明书v1.3.2; 226 6.46 根据D组的意见，形成H-EasySpider-测试需求规格说明书v1.3.3; 227 6.47 根据D组的意见，形成H-EasySpider-测试需求规格说明书v1.3.4；根据E组的意见，结果分析报告v1.3; 228 6.48 根据E组的意见，形成H-EasySpider-测试需求规格说明书v1.3.5; 229 6.49 根据E组的意见，形成H-EasySpider-测试需求规格说明书v1.3.6; 230 6.50 根据D、E组的意见形成性能测试报告v2.0; 231 6.51 和C组沟通，达成一致; 232 第14周; 233 6.52 与B组沟通评审意见，达成一致; 234 6.53 与B组沟通评审意见，达到一致; 235 6.54 形成H-EasySpider-工作量统计分析报告v1.4; 236 6.55 修复D组和E组报告的各1个缺陷; 237 6.56 制作汇报ppt及汇总; 238 6.57 更新MS Project至12.0; 239 项目结束

## Version 26 (saved 2020-06-01, file 项目进度计划v12.0.mpp)

Note of the change: 提交进度报告

Last finish 2020-05-07 → 2020-06-05 (+29d). Complete tasks 135 → 220.

Added:

| ID | Task | Duration | Start | Finish | Predecessors | Constraint | Resources |
| --- | --- | --- | --- | --- | --- | --- | --- |
| 149 | **5 软件测试需求分析** | 7d | 2020-05-08 A | 2020-05-14 A |  |  |  |
| 150 | **第11周** | 7d | 2020-05-08 A | 2020-05-14 A | 120 |  |  |
| 151 | 5.1 第16次组会：确定测试需求分析实验的初步分工 | 1d | 2020-05-08 A | 2020-05-08 A |  |  | 郭浩隆 [5%]; 梁远志 [5%]; 沈一聪 [5%]; 宋冰晨 [5%]; 赵正阳 [5%] |
| 152 | 5.2 实现用户修改个人信息、修改密码、创建模板功能 | 3d | 2020-05-09 A | 2020-05-11 A | 151 |  | 赵正阳 [20.8%] |
| 153 | 5.3 更新MPP至9.0 | 3d | 2020-05-08 A | 2020-05-10 A |  |  | 宋冰晨 [8.3%] |
| 154 | 5.4 为templateSetting页面的表单增加前端检查、实现修改任务名、批量删除任务、暂停/终止/重启/继续的前端效果 | 2d | 2020-05-09 A | 2020-05-10 A | 151 |  | 宋冰晨 [37.5%] |
| 155 | 5.5 实现使用channels推送消息后的前端效果 | 2d | 2020-05-09 A | 2020-05-10 A | 151 |  | 宋冰晨 [12.5%] |
| 156 | 5.6 实现数据预览、清空数据、下载csv/xlxs/json数据的前端效果 | 2d | 2020-05-09 A | 2020-05-10 A | 151 |  | 宋冰晨 [18.8%] |
| 157 | 5.7 实现最近编辑的相关设计和前端实现 | 2d | 2020-05-09 A | 2020-05-10 A | 151 |  | 宋冰晨 [18.8%] |
| 158 | 5.8 对接Task应用的前后端接口 | 0.2d | 2020-05-11 A | 2020-05-11 A | 154, 155, 156, 157 |  | 宋冰晨 [46.9%]; 赵正阳 [46.9%] |
| 159 | 5.9 完成创建模板等的前端开发任务 | 3d | 2020-05-09 A | 2020-05-11 A | 151 |  | 郭浩隆 [35.4%] |
| 160 | 5.10 对接创建模板的接口 | 1d | 2020-05-12 A | 2020-05-12 A | 152, 159 |  | 郭浩隆 [3.1%]; 赵正阳 [3.1%] |
| 161 | 5.11 实现重新运行任务、更新任务状态时向前端推送消息功能 | 0.8d | 2020-05-11 A | 2020-05-11 A | 158 |  | 赵正阳 [62.5%] |
| 162 | 5.12 列出测试用例和需求用例的对照表、整理测试规格文档的格式及补充术语 | 2d | 2020-05-09 A | 2020-05-10 A | 151 |  | 梁远志 [18.8%] |
| 163 | 5.13 解决在服务器部署的Websocket的Bug | 1d | 2020-05-12 A | 2020-05-12 A | 161 |  | 梁远志 [12.5%] |
| 164 | 5.14 调研软件测试，给出测试用例表、覆盖表、测试方法、工具等 | 2d | 2020-05-09 A | 2020-05-10 A | 151 |  | 沈一聪 [37.5%] |
| 165 | 5.15 第17次组会：确定覆盖表和PPT分工 | 1d | 2020-05-11 A | 2020-05-11 A | 164, 162 |  | 郭浩隆 [3.8%]; 梁远志 [3.8%]; 沈一聪 [3.8%]; 宋冰晨 [3.8%]; 赵正阳 [3.8%] |
| 166 | 5.16 完成web ui部分测试用例和覆盖表的编写 | 3d | 2020-05-12 A | 2020-05-14 A | 165 |  | 宋冰晨 [12.5%] |
| 167 | 5.17 针对管理员完成测试需求规格说明书和测试覆盖表的填写 | 3d | 2020-05-12 A | 2020-05-14 A | 165 |  | 郭浩隆 [10.4%] |
| 168 | 5.18 撰写管理员管理节点的测试用例，完成管理节点的测试用例的测试，形成覆盖表 | 3d | 2020-05-12 A | 2020-05-14 A | 165 |  | 梁远志 [16.7%] |
| 169 | 5.19 完成修改和删除模板功能、修复bug | 1d | 2020-05-12 A | 2020-05-12 A | 165 |  | 赵正阳 [50%] |
| 170 | 5.20 完成NFT测试用例表格的设计 | 1d | 2020-05-12 A | 2020-05-12 A | 165 |  | 沈一聪 [25%] |
| 171 | 5.21 完成Easyspider的非功能需求测试和性能测试工作 | 2d | 2020-05-13 A | 2020-05-14 A | 170 |  | 沈一聪 [31.2%] |
| 172 | 5.22 完成FT06~FT10五个测试用例的测试，填写覆盖表 | 3d | 2020-05-12 A | 2020-05-14 A | 165 |  | 赵正阳 [8.3%] |
| 173 | 5.23 第18次组会：测试网站运行情况，确定测试工作和ppt分工 | 1d | 2020-05-13 A | 2020-05-13 A | 163, 160, 169 |  | 郭浩隆 [5%]; 梁远志 [5%]; 沈一聪 [5%]; 宋冰晨 [5%]; 赵正阳 [5%] |
| 174 | 5.24 完成websocket、html转义、restart未更新最近编辑时间、datatable显示等BUG的修复，增加loading效果和前端阻止用户对同个任务同时进行多个操作 | 1d | 2020-05-14 A | 2020-05-14 A | 173 |  | 宋冰晨 [43.8%] |
| 175 | 5.25 完成scrapy爬虫模板的代理池功能 | 1d | 2020-05-14 A | 2020-05-14 A | 173 |  | 沈一聪 [37.5%] |
| 176 | 5.26 完成测试需求文档其余部分的编写和整合 | 1d | 2020-05-14 A | 2020-05-14 A | 173 |  | 沈一聪 [25%] |
| 177 | 5.27 优化在测试中发现调度器效率问题 | 1d | 2020-05-14 A | 2020-05-14 A | 173 |  | 梁远志 [12.5%] |
| 178 | **6 软件测试评审** | 16d | 2020-05-15 A | 2020-05-30 A |  |  |  |
| 179 | **第12周** | 7d | 2020-05-15 A | 2020-05-21 A | 150 |  |  |
| 180 | 6.1 完成普通用户web ui部分测试用例PPT | 0.5d | 2020-05-15 A | 2020-05-15 A |  |  | 宋冰晨 [25%] |
| 181 | 6.2 完成非功能需求测试机性能测试部分PPT | 0.5d | 2020-05-15 A | 2020-05-15 A |  |  | 沈一聪 |
| 182 | 6.3 完成部署部分和管理节点相关测试的幻灯片 | 0.5d | 2020-05-15 A | 2020-05-15 A |  |  | 梁远志 [50%] |
| 183 | 6.4 完成管理员等web ui部分的ppt的制作 | 0.5d | 2020-05-15 A | 2020-05-15 A |  |  | 郭浩隆 [25%] |
| 184 | 6.5 制作整合形成课堂汇报PPT | 0.5d | 2020-05-15 A | 2020-05-15 A | 180, 181, 182, 183 |  | 赵正阳 [12.5%] |
| 185 | 6.6 第19次组会：确定测试需求文档补充工作、评审工作的分工和DDL | 1d | 2020-05-15 A | 2020-05-15 A |  |  | 郭浩隆 [5%]; 梁远志 [5%]; 沈一聪 [5%]; 宋冰晨 [5%]; 赵正阳 [5%] |
| 186 | 6.7 更新MPP至10.0 | 7d | 2020-05-15 A | 2020-05-21 A |  |  | 宋冰晨 [5.4%] |
| 187 | 6.8 第20次小组会：确定测试需求文档补充工作、评审工作的分工和DDL | 1d | 2020-05-15 A | 2020-05-15 A |  |  | 郭浩隆 [5%]; 梁远志 [5%]; 沈一聪 [5%]; 宋冰晨 [5%]; 赵正阳 [5%] |
| 188 | 6.9 形成场景测试文档和对应的覆盖表 | 1d | 2020-05-16 A | 2020-05-16 A | 187 |  | 宋冰晨 [37.5%] |
| 189 | 6.10 形成可用性测试结果文档 | 3d | 2020-05-16 A | 2020-05-18 A | 187 |  | 宋冰晨 [8.3%] |
| 190 | 6.11 形成测试计划文档 | 2d | 2020-05-16 A | 2020-05-17 A | 187 |  | 宋冰晨 [18.8%] |
| 191 | 6.12 解决浏览器窗口搜小时布局混乱问题 | 4d | 2020-05-16 A | 2020-05-19 A | 187 |  | 宋冰晨 [1.6%] |
| 192 | 6.13 新增scrapy单元测试、集成测试、功能测试和Easyspider性能测试方案 | 2d | 2020-05-16 A | 2020-05-17 A | 187 |  | 沈一聪 [12.5%] |
| 193 | 6.14 完成Easyspider-site-douban的单元测试、集成测试和功能测试 | 1d | 2020-05-18 A | 2020-05-18 A | 192 |  | 沈一聪 [75%] |
| 194 | 6.15 形成H-EasySpider-性能测试报告v1.0 | 1d | 2020-05-19 A | 2020-05-19 A | 193 |  | 沈一聪 [37.5%] |
| 195 | 6.16 补充完善软件测试计划 | 1d | 2020-05-18 A | 2020-05-18 A | 190 |  | 沈一聪 [12.5%] |
| 196 | 6.17 修正修改模板页面bug，修改上传页面部分bug | 2d | 2020-05-16 A | 2020-05-17 A | 187 |  | 郭浩隆 [12.5%] |
| 197 | 6.18 制作软件问题表、测试规格说明书评审表和测试规格说明书检查单 | 3d | 2020-05-16 A | 2020-05-18 A | 187 |  | 郭浩隆 [6.2%] |
| 198 | 6.19 新增调度器单元测试、调度器/Django后端集成测试 | 1d | 2020-05-16 A | 2020-05-16 A | 187 |  | 梁远志 [62.5%] |
| 199 | 6.20 撰写测试规格说明的新增文档 | 1d | 2020-05-17 A | 2020-05-17 A | 198 |  | 梁远志 [25%] |
| 200 | 6.21 整理撰写测试结果及问题报告 | 1d | 2020-05-20 A | 2020-05-20 A | 188, 189, 193, 194 |  | 梁远志 [50%] |
| 201 | 6.22 形成H-EasySpider-测试需求规格说明书v1.1 | 1d | 2020-05-18 A | 2020-05-18 A | 188, 192, 199 |  | 赵正阳 [37.5%] |
| 202 | 6.23 形成H-EasySpider-工作量统计分析报告v1.3 | 4d | 2020-05-15 A | 2020-05-18 A |  |  | 赵正阳 [1.6%] |
| 203 | 6.24 完成对E组评审并生成7条评审意见和5条软件问题报告 | 1d | 2020-05-20 A | 2020-05-20 A |  | start no earlier than 2020-05-20 | 郭浩隆 [43.8%] |
| 204 | 6.25 形成对E组的8条评审意见 | 1d | 2020-05-20 A | 2020-05-20 A |  | start no earlier than 2020-05-20 | 赵正阳 [25%] |
| 205 | 6.26 形成对D组的13条测试需求文档的评审意见、8个软件问题、10条测试结果的评审意见 | 1d | 2020-05-20 A | 2020-05-20 A |  | start no earlier than 2020-05-20 | 宋冰晨 [25%] |
| 206 | 6.27 形成对D组的4条评审意见和5个软件问题汇报 | 1d | 2020-05-20 A | 2020-05-20 A |  | start no earlier than 2020-05-20 | 沈一聪 [25%] |
| 207 | 6.28 对D组形成10条评审意见和2个软件问题汇报 | 1d | 2020-05-20 A | 2020-05-20 A |  | start no earlier than 2020-05-20 | 梁远志 [25%] |
| 208 | 6.29 形成对D、E组的评审汇总和软件问题汇总 | 1d | 2020-05-21 A | 2020-05-21 A | 203, 204, 205, 206, 207 |  | 郭浩隆 [18.8%] |
| 209 | 6.30 将B组和C组的评审意见整理为反馈表并将问题分配到每个组员 | 0.3d | 2020-05-21 A | 2020-05-21 A |  | start no earlier than 2020-05-21 | 赵正阳 [83.3%] |
| 210 | 6.31 第21次小组会：确定评审组提出的BUG的修改方案和PPT分工 | 0.2d | 2020-05-21 A | 2020-05-21 A | 209 | start no earlier than 2020-05-21 | 郭浩隆 [12.5%]; 梁远志 [12.5%]; 沈一聪 [12.5%]; 宋冰晨 [12.5%]; 赵正阳 [12.5%] |
| 211 | 6.32 修改负责的评审问题和软件问题 | 0.2d | 2020-05-21 A | 2020-05-21 A | 210 |  | 郭浩隆 [62.5%]; 梁远志 [62.5%]; 沈一聪 [62.5%]; 宋冰晨 [62.5%]; 赵正阳 [62.5%] |
| 212 | 6.33 制作PPT | 0.2d | 2020-05-21 A | 2020-05-21 A | 211 |  | 梁远志 [62.5%] |
| 213 | **第13周** | 7d | 2020-05-22 A | 2020-05-28 A | 179 |  |  |
| 214 | 6.34 制作汇报PPT | 0.5d | 2020-05-22 A | 2020-05-22 A |  |  | 沈一聪 [25%] |
| 215 | 6.35 完成测试计划、场景测试、github issuse、评审反馈部分PPT | 0.5d | 2020-05-22 A | 2020-05-22 A |  |  | 宋冰晨 [50%] |
| 216 | 6.36 制作汇报PPT及完成PPT汇总 | 0.5d | 2020-05-22 A | 2020-05-22 A | 214, 215 |  | 赵正阳 [25%] |
| 217 | 6.37 评审C组测试文档，形成6个文档评审意见、5个软件问题 | 1d | 2020-05-27 A | 2020-05-27 A |  | start no earlier than 2020-05-27 | 赵正阳 [37.5%] |
| 218 | 6.38 更新MS Project至11.0 | 1d | 2020-05-22 A | 2020-05-22 A |  |  | 宋冰晨 [12.5%] |
| 219 | 6.39 评审C组测试文档，形成26条评审意见和14个软件问题 | 1d | 2020-05-27 A | 2020-05-27 A |  | start no earlier than 2020-05-27 | 宋冰晨 [25%] |
| 220 | 6.40 评审C组测试文档，形成10条评审意见和4个软件问题 | 1d | 2020-05-27 A | 2020-05-27 A |  | start no earlier than 2020-05-27 | 郭浩隆 [43.8%] |
| 221 | 6.41 完成对B组的测试评审，形成12条评审意见 | 1d | 2020-05-27 A | 2020-05-27 A |  | start no earlier than 2020-05-27 | 沈一聪 [25%] |
| 222 | 6.42 对B组进行测试评审，提出4个文档问题及3个软件问题 | 1d | 2020-05-27 A | 2020-05-27 A |  | start no earlier than 2020-05-27 | 梁远志 [25%] |
| 223 | 6.43 整合对B、C组的评审意见，形成H对B、C两组的文档评审意见汇总和软件问题汇总 | 1d | 2020-05-28 A | 2020-05-28 A | 217, 219, 220, 221, 222 | start no earlier than 2020-05-27 | 郭浩隆 [18.8%] |
| 224 | 6.44 根据D组的意见，形成H-EasySpider-测试需求规格说明书v1.3.1 | 0.16d | 2020-05-28 A | 2020-05-28 A |  | start no earlier than 2020-05-28 | 赵正阳 [78.1%] |
| 225 | 6.45 根据D组的意见，形成H-EasySpider-测试需求规格说明书v1.3.2 | 0.16d | 2020-05-28 A | 2020-05-28 A | 224 | start no earlier than 2020-05-28 | 宋冰晨 [39.1%] |
| 226 | 6.46 根据D组的意见，形成H-EasySpider-测试需求规格说明书v1.3.3 | 0.16d | 2020-05-28 A | 2020-05-28 A | 225 |  | 郭浩隆 [39.1%] |
| 227 | 6.47 根据D组的意见，形成H-EasySpider-测试需求规格说明书v1.3.4；根据E组的意见，结果分析报告v1.3 | 0.16d | 2020-05-28 A | 2020-05-28 A | 226 |  | 梁远志 [78.1%] |
| 228 | 6.48 根据E组的意见，形成H-EasySpider-测试需求规格说明书v1.3.5 | 0.16d | 2020-05-28 A | 2020-05-28 A | 227 |  | 赵正阳 [78.1%] |
| 229 | 6.49 根据E组的意见，形成H-EasySpider-测试需求规格说明书v1.3.6 | 0.2d | 2020-05-28 A | 2020-05-28 A | 228 |  | 宋冰晨 [31.2%] |
| 230 | 6.50 根据D、E组的意见形成性能测试报告v2.0 | 1d | 2020-05-28 A | 2020-05-28 A |  | start no earlier than 2020-05-28 | 沈一聪 [6.2%] |
| 231 | 6.51 和C组沟通，达成一致 | 1d | 2020-05-28 A | 2020-05-28 A |  | start no earlier than 2020-05-28 | 宋冰晨 [25%] |
| 232 | **第14周** | 2d | 2020-05-29 A | 2020-05-30 A | 213 |  |  |
| 233 | 6.52 与B组沟通评审意见，达成一致 | 0.5d | 2020-05-29 A | 2020-05-29 A |  |  | 沈一聪 [50%] |
| 234 | 6.53 与B组沟通评审意见，达到一致 | 0.5d | 2020-05-29 A | 2020-05-29 A |  |  | 梁远志 [25%] |
| 235 | 6.54 形成H-EasySpider-工作量统计分析报告v1.4 | 1d | 2020-05-29 A | 2020-05-29 A |  |  | 赵正阳 [12.5%] |
| 236 | 6.55 修复D组和E组报告的各1个缺陷 | 2d | 2020-05-29 A | 2020-05-30 A |  |  | 宋冰晨 [25%] |
| 237 | 6.56 制作汇报ppt及汇总 | 0.5d | 2020-05-29 A | 2020-05-29 A | 223, 227, 229, 230, 231, 233, 234 |  | 赵正阳 [25%] |
| 238 | 6.57 更新MS Project至12.0 | 1d | 2020-05-29 A | 2020-05-29 A |  |  | 宋冰晨 [25%] |
| 239 | 项目结束 | 0d | 2020-06-05 A | 2020-06-05 A |  | start no earlier than 2020-06-05 |  |
